# UTP-GPS-ALARM

How a schedule from MS Project changed from version to version. A marks actual dates.

## Version 1 (saved 2015-09-21)

Note of the change: Cronograma de Actividades

| ID | WBS | Task | Duration | Start | Finish | Predecessors | Complete | Total float | Constraint |
| --- | --- | --- | --- | --- | --- | --- | --- | --- | --- |
| 1 | 1 | **Proyecto UTP-GPS-ALARM** | 68d | 2015-09-01 A | 2015-11-19 |  | 26% | 0d |  |
| 2 | 1.1 | **Proceso de Gestion** | 68d | 2015-09-01 A | 2015-11-19 |  | 46% | 0d |  |
| 3 | 1.1.1 | **Inicio** | 68d | 2015-09-01 A | 2015-11-19 |  | 25% |  |  |
| 4 |  | Revision de la Metodologia de Trabajo | 67.88d | 2015-09-01 A | 2015-11-19 |  | 25% | 0.12d | finish no earlier than 2015-11-19 |
| 5 | 1.1.2 | **Planificacion** | 68d | 2015-09-01 A | 2015-11-19 |  | 80% | 0d |  |
| 6 | 1.1.2.1 | **Plan del Proyecto** | 11d | 2015-09-08 | 2015-09-19 | 3 | 91% |  |  |
| 7 | 1.1.2.1.1 | **Elaboracion de Plan de Proyecto** | 18d | 2015-09-01 A | 2015-09-21 |  | 88% |  |  |
| 8 |  | Definir Nombre del Proyecto | 1d | 2015-09-01 A | 2015-09-01 A |  | 100% |  |  |
| 9 |  | Definir Objetivos de Proyecto | 1d | 2015-09-02 A | 2015-09-02 A |  | 100% |  |  |
| 10 |  | Definicion de Entregables , Ajuste de Lista de Requerimientos | 1d | 2015-09-04 A | 2015-09-04 A |  | 100% |  |  |
| 11 |  | Elaboracion de Cronograma Detallado | 13d | 2015-09-04 A | 2015-09-18 A |  | 100% |  |  |
| 12 |  | Gestion de Comunicaciones | 1d | 2015-09-05 A | 2015-09-05 A |  | 100% |  | finish no earlier than 2015-09-01 |
| 13 |  | Necesidades del Proyecto | 2d | 2015-09-05 A | 2015-09-07 A |  | 100% |  |  |
| 14 |  | Lista de Requerimientos | 3d | 2015-09-09 A | 2015-09-11 A |  | 100% |  |  |
| 15 |  | Identificacion de Riesgos del Proyecto | 6.88d | 2015-09-07 A | 2015-09-19 |  | 44% |  |  |
| 16 |  | Elaborar Documento de Riesgos del Proyecto | 1d | 2015-09-19 A | 2015-09-19 A |  | 100% |  | start no earlier than 2015-09-14 |
| 17 |  | Elaborar Documento Plan de Proyecto | 10.88d | 2015-09-08 A | 2015-09-19 |  | 91% | 51.12d | finish no earlier than 2015-09-19 |
| 18 |  | Traspaso de Informacion | 1d | 2015-09-21 A | 2015-09-21 A | 16 | 100% |  |  |
| 19 | 1.1.2.1.2 | **Revision Interna de Proyecto** | 2d | 2015-09-19 A | 2015-09-21 |  | 100% |  |  |
| 20 |  | Revision de Plan de Proyecto por el equipo del Proyecto | 1d | 2015-09-19 A | 2015-09-19 A |  | 100% |  | finish no earlier than 2015-09-12 |
| 21 |  | Ajustes al Plan de Proyecto | 0.88d | 2015-09-19 A | 2015-09-19 A | 20 | 100% |  | finish no earlier than 2015-09-19 |
| 22 |  | Elaborar Acta de Revision de Documento | 1d | 2015-09-19 A | 2015-09-19 A | 24, 21 | 100% |  |  |
| 23 |  | Traspaso de Informacion | 1d | 2015-09-21 A | 2015-09-21 A | 22 | 100% |  | start no earlier than 2015-09-21 |
| 24 | 1.1.2.1.2.5 | **Aseguramiento de la Calidad de Proyecto** | 6d | 2015-09-29 A | 2015-10-05 A |  | 100% |  |  |
| 25 |  | Preparar Actividades de QA | 1d | 2015-09-29 A | 2015-09-29 A |  | 100% |  |  |
| 26 |  | Ejecutar la Revision de QA-Procesos | 1d | 2015-09-30 A | 2015-09-30 A | 25 | 100% |  |  |
| 27 |  | Levantar la No Conformidad | 1d | 2015-10-01 A | 2015-10-01 A | 26 | 100% |  |  |
| 28 |  | Realizar el seguimiento | 1d | 2015-10-02 A | 2015-10-02 A | 27 | 100% |  |  |
| 29 |  | Elaborar e informar las actividades de QA a Jefe de Proyecto | 1d | 2015-10-03 A | 2015-10-03 A | 28 | 100% |  |  |
| 30 |  | Traspaso de Informacion | 1d | 2015-10-05 A | 2015-10-05 A | 29 | 100% |  |  |
| 31 | 1.1.2.1.3 | **Gestion de la Configuracion** | 2d | 2015-09-04 A | 2015-09-05 A |  | 100% |  |  |
| 32 |  | Establecer Repositorio de Datos | 2d | 2015-09-04 A | 2015-09-05 A |  | 100% |  | finish no earlier than 2015-09-11 |
| 33 |  | Asignar Gestor de Configuracion | 0.5d | 2015-09-05 A | 2015-09-05 A | 32 | 100% |  | finish no earlier than 2015-09-05 |
| 34 | 1.1.2.2 | **Revision por el Cliente (Profesor)** | 3d | 2015-09-15 A | 2015-09-17 |  | 99% |  |  |
| 35 |  | Entrega de Plan de Proyecto | 1d | 2015-09-15 A | 2015-09-15 A |  | 100% |  | start no earlier than 2015-09-10 |
| 36 |  | Reunion Conjunta de Revision del Plan de Proyecto | 2.88d | 2015-09-15 A | 2015-09-17 A | 35 | 100% |  | finish no earlier than 2015-09-17 |
| 37 |  | Traspaso de Informacion | 1d | 2015-09-19 A | 2015-09-19 A | 36 | 100% |  |  |
| 38 | 1.1.2.3 | **Kick Off Meeting Externos** | 48d | 2015-09-24 | 2015-11-19 |  |  | -0.12d |  |
| 39 | 1.1.2.3.1 | **1 Presentacion del Proyecto** | 2d | 2015-09-24 | 2015-09-25 |  |  |  |  |
| 40 |  | Revision de Entregables de Area de Proceso PP-PMC | 1d | 2015-09-24 | 2015-09-24 |  |  | 47d | start no earlier than 2015-09-24 |
| 41 |  | Acta de Reunion con acuerdos tomados | 1d | 2015-09-24 | 2015-09-24 |  |  | -0.12d | start no earlier than 2015-09-24 |
| 42 |  | Traspaso de Informacion | 1d | 2015-09-25 | 2015-09-25 | 41 |  | -0.12d |  |
| 43 | 1.1.2.3.2 | **2 Presentacion del Proyecto** | 1d | 2015-10-22 | 2015-10-22 |  |  |  |  |
| 44 |  | Kick Off Meeting con Profesor | 1d | 2015-10-22 | 2015-10-22 |  |  | -1.12d |  |
| 45 |  | Acta de Reunion con acuerdos tomados | 1d | 2015-10-23 | 2015-10-23 | 44 |  | -1.12d |  |
| 46 |  | Traspaso de Informacion | 1d | 2015-10-22 | 2015-10-22 |  |  | -0.12d |  |
| 47 | 1.1.2.3.3 | **3 Presentacion del Proyecto** | 1d | 2015-11-19 | 2015-11-19 |  |  |  |  |
| 48 |  | Kick Off Meeting con Profesor | 1d | 2015-11-19 | 2015-11-19 |  |  | -0.12d |  |
| 49 |  | Acta de Reunion con acuerdos tomados | 1d | 2015-11-19 | 2015-11-19 |  |  | 0d | start no earlier than 2015-11-19 |
| 50 |  | Traspaso de Informacion | 1d | 2015-11-18 | 2015-11-19 |  |  | 0.12d | finish no earlier than 2015-11-19 |
| 51 | 1.1.3 | **Asignacion,Ejecucion, Seguimiento y Control** | 61.88d | 2015-09-08 A | 2015-11-19 |  | 32% | 0d |  |
| 52 | 1.1.3.1 | **Desarrollo del Area de Proceso PP- PPMC** | 12d | 2015-09-08 A | 2015-09-21 A |  | 100% |  |  |
| 53 |  | Elaborar Plantilla de Reunion Quincenal | 1d | 2015-09-08 A | 2015-09-08 A |  | 100% |  |  |
| 54 |  | Elaborar Plantilla de Gestion de Riesgos | 1d | 2015-09-09 A | 2015-09-09 A | 53 | 100% |  |  |
| 55 |  | Elaborar Plantilla de Informe de Actividades Quincenales | 2d | 2015-09-10 A | 2015-09-11 A | 54 | 100% |  |  |
| 56 |  | Elaborar Plantillas de Actas de Reunion Quincenal | 1d | 2015-09-11 A | 2015-09-11 A | 55 | 100% |  |  |
| 57 |  | Elaborar Plantilla CheckList de Agenda a Reuniones Quincenales | 1d | 2015-09-12 A | 2015-09-12 A | 56 | 100% |  |  |
| 58 |  | Elaborar Formato de Aceptacion de Entregables | 2d | 2015-09-12 A | 2015-09-14 A | 57 | 100% |  |  |
| 59 |  | Elaborar Documento Gestion de Procesos PP-PMC | 6d | 2015-09-14 A | 2015-09-19 A | 58 | 100% |  |  |
| 60 |  | Traspaso de Informacion | 1d | 2015-09-21 A | 2015-09-21 A |  | 100% |  | start no earlier than 2015-09-21 |
| 61 | 1.1.3.2 | **Desarrollo del Area de Proceso REQM** | 10d | 2015-09-29 | 2015-10-10 |  |  |  |  |
| 62 |  | Elaborar Formato Acta de Reunion con Cliente | 1d? | 2015-09-29 | 2015-09-29 |  |  | 8.88d |  |
| 63 |  | Elaborar Formato de Solicitud a Cambios a Requerimientos | 1d? | 2015-09-29 | 2015-09-29 |  |  | 8.88d |  |
| 64 |  | Elaborar Matriz de Trazabilidad de Requerimientos | 1d? | 2015-09-29 | 2015-09-29 |  |  | 8.88d |  |
| 65 |  | Elaborar Formato de Registro de Cambios a Requerimientos | 1d? | 2015-09-29 | 2015-09-29 |  |  | 8.88d |  |
| 66 |  | Elaborar Documento Gestion de Requerimientos | 1d? | 2015-09-29 | 2015-09-29 |  |  | 8.88d |  |
| 67 |  | Traspaso de Informacion | 1d? | 2015-09-29 | 2015-09-29 |  |  | 8.88d |  |
| 68 | 1.1.3.3 | **Desarrollo del Area de Proceso PPQA** | 5d | 2015-09-29 | 2015-10-03 |  |  |  |  |
| 69 |  | Elaborar Matriz Seguimiento Proyectos Internos PQA | 1d? | 2015-09-29 | 2015-09-29 |  |  | 3.88d |  |
| 70 |  | Elaborar Metricas del Proyecto | 1d? | 2015-09-29 | 2015-09-29 |  |  | 3.88d |  |

| ID | WBS | Task | Duration | Start | Finish | Predecessors | Complete | Total float | Constraint |
| --- | --- | --- | --- | --- | --- | --- | --- | --- | --- |
| 71 |  | Elaborar Tablero de Metricas de Servicio | 1d? | 2015-09-29 | 2015-09-29 |  |  | 3.88d |  |
| 72 |  | Elaborar Tablero de Metricas de la Coordinacion | 1d? | 2015-09-29 | 2015-09-29 |  |  | 3.88d |  |
| 73 |  | Elaborar Documento de Proceso de Aseguramiento de la Calidad | 1d? | 2015-09-29 | 2015-09-29 |  |  | 3.88d |  |
| 74 |  | Traspaso de Informacion | 1d? | 2015-09-29 | 2015-09-29 |  |  | 3.88d |  |
| 75 | 1.1.3.4 | **Desarrollo del Area de Proceso MA** | 13d | 2015-10-16 | 2015-10-30 |  |  |  |  |
| 76 |  | Elaborar Ficha de Metricas | 1d? | 2015-10-16 | 2015-10-16 |  |  | 11.88d |  |
| 77 |  | Elaborar Documento Volatilidad de Requirimientos | 1d? | 2015-10-16 | 2015-10-16 |  |  | 11.88d |  |
| 78 |  | Elaborar Plantilla Ficha de Indicados en blanco | 1d? | 2015-10-16 | 2015-10-16 |  |  | 11.88d |  |
| 79 |  | Elaborar Plantilla Ficha Indicador Instructivo | 1d? | 2015-10-16 | 2015-10-16 |  |  | 11.88d |  |
| 80 |  | Elaborar Documento de Proceso de Medidion MA | 1d? | 2015-10-16 | 2015-10-16 |  |  | 11.88d |  |
| 81 |  | Traspaso de Informacion | 1d? | 2015-10-16 | 2015-10-16 |  |  | 11.88d |  |
| 82 | 1.1.3.5 | **Desarrollo del Area de Proceso GC** | 15d | 2015-11-03 | 2015-11-19 |  |  |  |  |
| 83 |  | Elaborar Registro de Items de Configuracion | 1d? | 2015-11-03 | 2015-11-03 |  |  | 13.88d |  |
| 84 |  | Elaborar Formato de Solicitud de Accesos | 1d? | 2015-11-03 | 2015-11-03 |  |  | 13.88d |  |
| 85 |  | Elaborar Documento de Proceso de Gestion de Configuracion | 1d? | 2015-11-03 | 2015-11-03 |  |  | 13.88d |  |
| 86 |  | Elaborar Metrica e Indice de Cambios a Items de Configuracion | 1d? | 2015-11-03 | 2015-11-03 |  |  | 13.88d |  |
| 87 |  | Traspaso de Informacion | 1d? | 2015-11-03 | 2015-11-03 |  |  | 13.88d |  |
| 88 | 1.1.3.6 | **Aseguramiento de Calidad MES 1** | 7d | 2015-09-29 | 2015-10-06 |  |  |  |  |
| 89 |  | Preparar las actividades de QA | 0.5d | 2015-09-29 | 2015-09-29 |  |  | 4.88d |  |
| 90 |  | Ejecutar la Revisión de QA - Procesos | 0.5d | 2015-09-29 | 2015-09-29 | 89 |  | 4.88d |  |
| 91 |  | Levantar la No Conformidad | 0.5d | 2015-09-30 | 2015-09-30 | 90 |  | 4.88d |  |
| 92 |  | Elaborar e Informar las actividades de QA a la Gerencia del Servicio | 0.5d | 2015-09-30 | 2015-09-30 | 91 |  | 4.88d |  |
| 93 |  | Traspaso de Informacion | 1d? | 2015-09-29 | 2015-09-29 |  |  | 5.88d |  |
| 94 | 1.1.3.7 | **Aseguramiento de Calidad MES 2** | 9d | 2015-10-13 | 2015-10-22 |  |  |  |  |
| 95 |  | Preparar las actividades de QA | 0.5d | 2015-10-13 | 2015-10-13 |  |  | 6.88d |  |
| 96 |  | Ejecutar la Revisión de QA - Procesos | 0.5d | 2015-10-13 | 2015-10-13 | 95 |  | 6.88d |  |
| 97 |  | Levantar la No Conformidad | 0.5d | 2015-10-14 | 2015-10-14 | 96 |  | 6.88d |  |
| 98 |  | Elaborar e Informar las actividades de QA a la Gerencia del Servicio | 0.5d | 2015-10-14 | 2015-10-14 | 97 |  | 6.88d |  |
| 99 |  | Traspaso de Informacion | 1d? | 2015-10-13 | 2015-10-13 |  |  | 7.88d |  |
| 100 | 1.1.3.8 | **Aseguramiento de Calidad MES 3** | 9d | 2015-11-10 | 2015-11-19 |  |  |  |  |
| 101 |  | Preparar las actividades de QA | 0.5d | 2015-11-10 | 2015-11-10 |  |  | 6.88d |  |
| 102 |  | Ejecutar la Revisión de QA - Procesos | 0.5d | 2015-11-10 | 2015-11-10 | 101 |  | 6.88d |  |
| 103 |  | Levantar la No Conformidad | 0.5d | 2015-11-11 | 2015-11-11 | 102 |  | 6.88d |  |
| 104 |  | Elaborar e Informar las actividades de QA a la Gerencia del Servicio | 0.5d | 2015-11-11 | 2015-11-11 | 103 |  | 6.88d |  |
| 105 |  | Traspaso de Informacion | 1d? | 2015-11-10 | 2015-11-10 |  |  | 7.88d |  |
| 106 | 1.1.4 | **Cierre** | 2d | 2015-11-18 | 2015-11-19 |  |  |  |  |
| 107 | 1.1.4.1 | **Cierre de Proyecto** | 1d? | 2015-11-18 | 2015-11-18 |  |  |  |  |
| 108 |  | Revisión de Entregables del Proyecto | 0.5d | 2015-11-18 | 2015-11-18 |  |  | 0.38d |  |
| 109 |  | Elaboracion del Acta de Aceptacion y Cierre del Proyecto | 0.5d | 2015-11-18 | 2015-11-18 |  |  | 0.38d |  |
| 110 |  | Traspaso de Informacion | 1d? | 2015-11-18 | 2015-11-18 |  |  | -0.12d |  |
| 111 | 1.1.4.2 | **Relatorio de Proyecto** | 1d | 2015-11-19 | 2015-11-19 |  |  |  |  |
| 112 |  | Elaborar relatorio de Proyecto | 1d | 2015-11-19 | 2015-11-19 |  |  | -0.12d |  |
| 113 |  | Revision y ajustes de relatorio por el equipo del Proyecto | 0.5d | 2015-11-19 | 2015-11-19 |  |  | -0.12d | start no earlier than 2015-11-19 |
| 114 |  | Revision de relatorio | 0.5d | 2015-11-19 | 2015-11-19 | 113 |  | -0.12d |  |
| 115 |  | Traspaso de Informacion | 1d? | 2015-11-19 | 2015-11-19 |  |  | -0.12d |  |
| 116 | 1.2 | **Proceso de Ingenieria** | 44.88d | 2015-09-14 A | 2015-11-05 |  | 4% | 12.12d |  |
| 117 | 1.2.1 | **Software UTP-GPS-ALARM** | 45d | 2015-09-14 A | 2015-11-05 |  | 4% |  |  |
| 118 | 1.2.1.1 | **Analisis** | 17.88d | 2015-09-14 A | 2015-10-03 |  | 14% |  |  |
| 119 |  | Elaborar Documento con Diseño Actual | 1d | 2015-09-14 | 2015-09-14 |  |  | 15.88d | start no earlier than 2015-09-14 |
| 120 |  | Elaborar Requerimientos para c/modulo | 9.88d | 2015-09-14 | 2015-09-24 |  |  | 47.12d | finish no earlier than 2015-09-24 |
| 121 |  | Revision de Documento de Diseño Actual | 1d | 2015-09-15 | 2015-09-15 | 119 |  | 15.88d |  |
| 122 |  | Traspaso de Informacion | 1d | 2015-09-15 | 2015-09-15 |  |  | 55d | start no earlier than 2015-09-15 |
| 123 | 1.2.1.1.5 | **Casos de Uso** | 17.88d | 2015-09-14 A | 2015-10-03 |  | 20% |  |  |
| 124 | 1.2.1.1.5.1 | **Caso de Uso Modulo 1** | 17.88d | 2015-09-14 A | 2015-10-03 |  | 38% |  |  |
| 125 |  | Entender la problemática actual | 1d | 2015-09-14 A | 2015-09-14 A |  | 100% |  |  |
| 126 |  | Elaborar Casos de Uso | 1d | 2015-09-15 A | 2015-09-15 A | 125 | 100% |  |  |
| 127 |  | Actualizar Glosario de Terminos | 0.5d | 2015-09-16 A | 2015-09-16 A | 126 | 100% |  |  |
| 128 |  | Elaborar Caso de Uso Mejorado | 0.5d | 2015-09-16 A | 2015-09-16 A | 127 | 100% |  |  |
| 129 | 1.2.1.1.5.1.5 | **Aseguramiento de Calidad del Caso de Uso Modulo 1** | 5d | 2015-09-29 | 2015-10-03 |  |  |  |  |
| 130 |  | Preparar las actividades de QA | 1d | 2015-09-29 | 2015-09-30 |  |  | 42.12d | finish no earlier than 2015-09-30 |
| 131 |  | Ejecutar la Revisión de QA - Procesos | 1d | 2015-09-29 | 2015-09-30 |  |  | 42.12d | finish no earlier than 2015-09-30 |
| 132 |  | Levantar la No Conformidad | 1d | 2015-09-30 | 2015-10-01 |  |  | 41.12d | finish no earlier than 2015-10-01 |
| 133 |  | Elaborar el informe de Revision de QA para la Gerencia del Servicio | 1d | 2015-09-29 | 2015-09-29 |  |  | 3.88d |  |
| 134 |  | Traspaso de Informacion | 1d | 2015-09-29 | 2015-09-29 |  |  | 3.88d |  |
| 135 | 1.2.1.1.5.2 | **Caso de Uso Modulo 2** | 15d | 2015-09-17 A | 2015-10-03 |  | 44% |  |  |
| 136 |  | Entender la problemática actual | 1d | 2015-09-17 A | 2015-09-17 A |  | 100% |  |  |
| 137 |  | Elaborar Casos de Uso | 1d | 2015-09-18 A | 2015-09-18 A | 136 | 100% |  |  |
| 138 |  | Actualizar Glosario de Terminos | 1d | 2015-09-19 A | 2015-09-19 A | 139 | 100% |  |  |
| 139 |  | Elaborar Caso de Uso Mejorado | 1d | 2015-09-19 A | 2015-09-19 A | 137 | 100% |  |  |
| 140 | 1.2.1.1.5.2.5 | **Aseguramiento de Calidad del Caso de Uso Modulo 2** | 5d | 2015-09-29 | 2015-10-03 |  |  |  |  |

| ID | WBS | Task | Duration | Start | Finish | Predecessors | Total float | Constraint |
| --- | --- | --- | --- | --- | --- | --- | --- | --- |
| 141 |  | Preparar las actividades de QA | 1d | 2015-09-29 | 2015-09-29 |  | 3.88d |  |
| 142 |  | Ejecutar la Revisión de QA - Procesos | 1d | 2015-09-29 | 2015-09-29 |  | 3.88d |  |
| 143 |  | Levantar la No Conformidad | 1d | 2015-09-29 | 2015-09-29 |  | 3.88d |  |
| 144 |  | Elaborar el informe de Revision de QA para la Gerencia del Servicio | 1d | 2015-09-29 | 2015-09-29 |  | 3.88d |  |
| 145 |  | Traspaso de Informacion | 1d | 2015-09-29 | 2015-09-29 |  | 3.88d |  |
| 146 | 1.2.1.1.5.3 | **Caso de Uso Modulo 3** | 13d | 2015-09-19 | 2015-10-03 |  |  |  |
| 147 |  | Entender la problemática actual | 1d | 2015-09-19 | 2015-09-19 |  | 11.88d |  |
| 148 |  | Elaborar Casos de Uso | 1d | 2015-09-19 | 2015-09-19 |  | 9.88d | start no earlier than 2015-09-19 |
| 149 |  | Actualizar Glosario de Terminos | 1d | 2015-09-21 | 2015-09-21 | 148 | 9.88d |  |
| 150 |  | Elaborar Caso de Uso Mejorado | 1d | 2015-09-22 | 2015-09-22 | 149 | 9.88d |  |
| 151 | 1.2.1.1.5.3.5 | **Aseguramiento de Calidad del Caso de Uso Modulo 3** | 5d | 2015-09-29 | 2015-10-03 |  |  |  |
| 152 |  | Preparar las actividades de QA | 1d? | 2015-09-29 | 2015-09-29 |  | 3.88d |  |
| 153 |  | Ejecutar la Revisión de QA - Procesos | 1d? | 2015-09-29 | 2015-09-29 |  | 3.88d |  |
| 154 |  | Levantar la No Conformidad | 1d? | 2015-09-29 | 2015-09-29 |  | 3.88d |  |
| 155 |  | Elaborar el informe de Revision de QA para la Gerencia del Servicio | 1d? | 2015-09-29 | 2015-09-29 |  | 3.88d |  |
| 156 |  | Traspaso de Informacion | 1d? | 2015-09-29 | 2015-09-29 |  | 3.88d |  |
| 157 | 1.2.1.1.5.4 | **Caso de Uso Modulo 4** | 12d | 2015-09-21 | 2015-10-03 |  |  |  |
| 158 |  | Entender la problemática actual | 1d? | 2015-09-21 | 2015-09-21 |  | 10.88d |  |
| 159 |  | Elaborar Casos de Uso | 1d? | 2015-09-21 | 2015-09-21 |  | 10.88d |  |
| 160 |  | Actualizar Glosario de Terminos | 1d? | 2015-09-21 | 2015-09-21 |  | 10.88d |  |
| 161 |  | Elaborar Caso de Uso Mejorado | 1d? | 2015-09-21 | 2015-09-21 |  | 10.88d |  |
| 162 | 1.2.1.1.5.4.5 | **Aseguramiento de Calidad del Caso de Uso Modulo 4** | 5d | 2015-09-29 | 2015-10-03 |  |  |  |
| 163 |  | Preparar las actividades de QA | 1d? | 2015-09-29 | 2015-09-29 |  | 3.88d |  |
| 164 |  | Ejecutar la Revisión de QA - Procesos | 1d? | 2015-09-29 | 2015-09-29 |  | 3.88d |  |
| 165 |  | Levantar la No Conformidad | 1d? | 2015-09-29 | 2015-09-29 |  | 3.88d |  |
| 166 |  | Elaborar el informe de Revision de QA para la Gerencia del Servicio | 1d? | 2015-09-29 | 2015-09-29 |  | 3.88d |  |
| 167 |  | Traspaso de Informacion | 1d? | 2015-09-29 | 2015-09-29 |  | 3.88d |  |
| 168 |  | Actualizar Matriz de Trazabilidad de Requerimientos | 1d? | 2015-09-14 | 2015-09-14 |  | 16.88d |  |
| 169 |  | Traspaso de Informacion | 1d? | 2015-09-14 | 2015-09-14 |  | 16.88d |  |
| 170 | 1.2.1.2 | **Diseño** | 1d | 2015-09-14 | 2015-09-14 |  | 0d |  |
| 171 | 1.2.1.2.1 | **Documento de Diseño** | 1d | 2015-09-14 | 2015-09-14 |  |  |  |
| 172 |  | Analisis de la Informacion ,elaborar Documento de Diseño Tecnico | 1d | 2015-09-14 | 2015-09-14 |  | 0d |  |
| 173 |  | Revision de Documento de Diseño Mejorado | 1d | 2015-09-14 | 2015-09-14 |  | 0d |  |
| 174 |  | Traspaso de Informacion | 1d | 2015-09-14 | 2015-09-14 |  | 0d |  |
| 175 | 1.2.1.2.1.4 | **Aseguramiento de la calidad** | 1d | 2015-09-14 | 2015-09-14 |  |  |  |
| 176 |  | Preparar las actividades de QA. | 1d? | 2015-09-14 | 2015-09-14 |  | 0d |  |
| 177 |  | Ejecutar la Revisión de QA | 1d? | 2015-09-14 | 2015-09-14 |  | 0d |  |
| 178 |  | Ejecutar la Revisión de procesos | 1d? | 2015-09-14 | 2015-09-14 |  | 0d |  |
| 179 |  | Levantar la No Conformidad | 1d? | 2015-09-14 | 2015-09-14 |  | 0d |  |
| 180 |  | Realizar el seguimiento | 1d? | 2015-09-14 | 2015-09-14 |  | 0d |  |
| 181 |  | Elaborar el informe de Revision de QA para la Gerencia del Servicio | 1d? | 2015-09-14 | 2015-09-14 |  | 0d |  |
| 182 |  | Traspaso de Informacion | 1d? | 2015-09-14 | 2015-09-14 |  | 0d |  |
| 183 |  | Actualizar Matriz de Trazabilidad de Requerimientos | 1d | 2015-09-14 | 2015-09-14 |  | 43.88d |  |
| 184 |  | Traspaso de Informacion | 1d | 2015-09-14 | 2015-09-14 |  | 43.88d |  |
| 185 | 1.2.1.3 | **Construccion** | 1d? | 2015-09-14 | 2015-09-14 |  | 43.88d |  |
| 186 | 1.2.1.3.1 | **Inducción de personal** | 1d? | 2015-09-14 | 2015-09-14 |  | 43.88d |  |
| 187 |  | Establecer personal para inducción | 1d? | 2015-09-14 | 2015-09-14 |  | 43.88d |  |
| 188 |  | Realizar inducción al personal | 1d? | 2015-09-14 | 2015-09-14 |  | 43.88d |  |
| 189 |  | Verificar proceso de inducción | 1d? | 2015-09-14 | 2015-09-14 |  | 43.88d |  |
| 190 |  | Elaborar Certificado de Induccion de Personal | 1d? | 2015-09-14 | 2015-09-14 |  | 43.88d |  |
| 191 |  | Traspaso de Informacion | 1d? | 2015-09-14 | 2015-09-14 |  | 43.88d |  |
| 192 |  | Pasar a area de Desarrollo a Personal Capacitado | 1d? | 2015-09-14 | 2015-09-14 |  | 43.88d |  |
| 193 | 1.2.1.3.2 | **Modulo de Instalacion de APK** | 1d? | 2015-09-14 | 2015-09-14 |  | 43.88d |  |
| 194 | 1.2.1.3.2.1 | **Construccion de Modulo** | 1d? | 2015-09-14 | 2015-09-14 |  | 43.88d |  |
| 195 |  | Asignar permisos de usuario para la aplicación | 1d? | 2015-09-14 | 2015-09-14 |  | 43.88d |  |
| 196 |  | Vincular usuario a cuenta | 1d? | 2015-09-14 | 2015-09-14 |  | 43.88d |  |
| 197 |  | Confirmacion y aceptar condiciones y terminos de uso | 1d? | 2015-09-14 | 2015-09-14 |  | 43.88d |  |
| 198 |  | Traspaso de Informacion | 1d? | 2015-09-14 | 2015-09-14 |  | 43.88d |  |
| 199 | 1.2.1.3.2.2 | **Pruebas de Modulo** | 1d? | 2015-09-14 | 2015-09-14 |  | 43.88d |  |
| 200 |  | Realizar Pruebas del Modulo | 1d? | 2015-09-14 | 2015-09-14 |  | 43.88d |  |
| 201 |  | Elaborar Informe de Pruebas | 1d? | 2015-09-14 | 2015-09-14 |  | 43.88d |  |
| 202 |  | Traspaso de Informacion | 1d? | 2015-09-14 | 2015-09-14 |  | 43.88d |  |
| 203 | 1.2.1.3.2.3 | **Guias de Modulo** | 1d? | 2015-09-14 | 2015-09-14 |  | 43.88d |  |
| 204 |  | Elaborar Manual de Usuario del Modulo | 1d? | 2015-09-14 | 2015-09-14 |  | 43.88d |  |
| 205 |  | Traspaso de Informacion | 1d? | 2015-09-14 | 2015-09-14 |  | 43.88d |  |
| 206 | 1.2.1.3.2.4 | **Aseguramiento de Calidad del Modulo Instalacion APK** | 1d? | 2015-09-14 | 2015-09-14 |  | 43.88d |  |
| 207 |  | Preparar las actividades de QA | 1d? | 2015-09-14 | 2015-09-14 |  | 43.88d |  |
| 208 |  | Ejecutar la Revisión de QA - Procesos | 1d? | 2015-09-14 | 2015-09-14 |  | 43.88d |  |
| 209 |  | Levantar la No Conformidad | 1d? | 2015-09-14 | 2015-09-14 |  | 43.88d |  |
| 210 |  | Elaborar el informe de Revision de QA para la Gerencia del Servicio | 1d? | 2015-09-14 | 2015-09-14 |  | 43.88d |  |

| ID | WBS | Task | Duration | Start | Finish | Total float |
| --- | --- | --- | --- | --- | --- | --- |
| 211 |  | Traspaso de Informacion | 1d? | 2015-09-14 | 2015-09-14 | 43.88d |
| 212 | 1.2.1.3.3 | **Modulo de Ingreso de Coordenadas y Destino** | 1d? | 2015-09-14 | 2015-09-14 | 43.88d |
| 213 | 1.2.1.3.3.1 | **Construccion de Modulo** | 1d? | 2015-09-14 | 2015-09-14 | 43.88d |
| 214 |  | Ubicación Actual | 1d? | 2015-09-14 | 2015-09-14 | 43.88d |
| 215 |  | Asignar Destino | 1d? | 2015-09-14 | 2015-09-14 | 43.88d |
| 216 |  | Cálculo de distancia hasta el destino | 1d? | 2015-09-14 | 2015-09-14 | 43.88d |
| 217 |  | Establecer Rango de Alarma | 1d? | 2015-09-14 | 2015-09-14 | 43.88d |
| 218 |  | Establecer tipo de Alarma ,volumen , vibrador | 1d? | 2015-09-14 | 2015-09-14 | 43.88d |
| 219 |  | Traspaso de Informacion | 1d? | 2015-09-14 | 2015-09-14 | 43.88d |
| 220 | 1.2.1.3.3.2 | **Pruebas de Modulo** | 1d? | 2015-09-14 | 2015-09-14 | 43.88d |
| 221 |  | Realizar Pruebas del Modulo | 1d? | 2015-09-14 | 2015-09-14 | 43.88d |
| 222 |  | Elaborar Informe de Pruebas | 1d? | 2015-09-14 | 2015-09-14 | 43.88d |
| 223 |  | Traspaso de Informacion | 1d? | 2015-09-14 | 2015-09-14 | 43.88d |
| 224 | 1.2.1.3.3.3 | **Guias de Modulo** | 1d? | 2015-09-14 | 2015-09-14 | 43.88d |
| 225 |  | Elaborar Manual de Usuario del Modulo | 1d? | 2015-09-14 | 2015-09-14 | 43.88d |
| 226 |  | Traspaso de Informacion | 1d? | 2015-09-14 | 2015-09-14 | 43.88d |
| 227 | 1.2.1.3.3.4 | **Aseguramiento de Calidad del Modulo Ingreso Coordenadas y Destino** | 1d? | 2015-09-14 | 2015-09-14 | 43.88d |
| 228 |  | Preparar las actividades de QA | 1d? | 2015-09-14 | 2015-09-14 | 43.88d |
| 229 |  | Ejecutar la Revisión de QA - Procesos | 1d? | 2015-09-14 | 2015-09-14 | 43.88d |
| 230 |  | Levantar la No Conformidad | 1d? | 2015-09-14 | 2015-09-14 | 43.88d |
| 231 |  | Elaborar el informe de Revision de QA para la Gerencia del Servicio | 1d? | 2015-09-14 | 2015-09-14 | 43.88d |
| 232 |  | Traspaso de Informacion | 1d? | 2015-09-14 | 2015-09-14 | 43.88d |
| 233 | 1.2.1.3.4 | **Modulo de Rutas** | 1d? | 2015-09-14 | 2015-09-14 | 43.88d |
| 234 | 1.2.1.3.4.1 | **Construccion de Modulo** | 1d? | 2015-09-14 | 2015-09-14 | 43.88d |
| 235 |  | Mostrar lista de ultimas rutas usadas | 1d? | 2015-09-14 | 2015-09-14 | 43.88d |
| 236 |  | Guardar Historial de Rutas | 1d? | 2015-09-14 | 2015-09-14 | 43.88d |
| 237 |  | Guardar Rutas Favoritas | 1d? | 2015-09-14 | 2015-09-14 | 43.88d |
| 238 |  | Traspaso de Informacion | 1d? | 2015-09-14 | 2015-09-14 | 43.88d |
| 239 | 1.2.1.3.4.2 | **Pruebas de Modulo** | 1d? | 2015-09-14 | 2015-09-14 | 43.88d |
| 240 |  | Realizar Pruebas del Modulo | 1d? | 2015-09-14 | 2015-09-14 | 43.88d |
| 241 |  | Elaborar Informe de Pruebas | 1d? | 2015-09-14 | 2015-09-14 | 43.88d |
| 242 |  | Traspaso de Informacion | 1d? | 2015-09-14 | 2015-09-14 | 43.88d |
| 243 | 1.2.1.3.4.3 | **Guias de Modulo** | 1d? | 2015-09-14 | 2015-09-14 | 43.88d |
| 244 |  | Elaborar Manual de Usuario del Modulo | 1d? | 2015-09-14 | 2015-09-14 | 43.88d |
| 245 |  | Traspaso de Informacion | 1d? | 2015-09-14 | 2015-09-14 | 43.88d |
| 246 | 1.2.1.3.4.4 | **Aseguramiento de Calidad del Modulo Rutas** | 1d? | 2015-09-14 | 2015-09-14 | 43.88d |
| 247 |  | Preparar las actividades de QA | 1d? | 2015-09-14 | 2015-09-14 | 43.88d |
| 248 |  | Ejecutar la Revisión de QA - Procesos | 1d? | 2015-09-14 | 2015-09-14 | 43.88d |
| 249 |  | Levantar la No Conformidad | 1d? | 2015-09-14 | 2015-09-14 | 43.88d |
| 250 |  | Elaborar el informe de Revision de QA para la Gerencia del Servicio | 1d? | 2015-09-14 | 2015-09-14 | 43.88d |
| 251 |  | Traspaso de Informacion | 1d? | 2015-09-14 | 2015-09-14 | 43.88d |
| 252 | 1.2.1.3.5 | **Modulo de Seguridad** | 1d? | 2015-09-14 | 2015-09-14 | 43.88d |
| 253 | 1.2.1.3.5.1 | **Construccion de Modulo** | 1d? | 2015-09-14 | 2015-09-14 | 43.88d |
| 254 |  | Iniciar la aplicación al iniciar el dispositivo siempre que el usuario lo desee. | 1d? | 2015-09-14 | 2015-09-14 | 43.88d |
| 255 |  | Comprobaciones de seguridad adicionales realizadas con el muestreo de licencia. | 1d? | 2015-09-14 | 2015-09-14 | 43.88d |
| 256 |  | Control de piratería de la aplicación | 1d? | 2015-09-14 | 2015-09-14 | 43.88d |
| 257 | 1.2.1.3.5.2 | **Pruebas de Modulo** | 1d? | 2015-09-14 | 2015-09-14 | 43.88d |
| 258 |  | Realizar Pruebas del Modulo | 1d? | 2015-09-14 | 2015-09-14 | 43.88d |
| 259 |  | Elaborar Informe de Pruebas | 1d? | 2015-09-14 | 2015-09-14 | 43.88d |
| 260 |  | Traspaso de Informacion | 1d? | 2015-09-14 | 2015-09-14 | 43.88d |
| 261 | 1.2.1.3.5.3 | **Guias de Modulo** | 1d? | 2015-09-14 | 2015-09-14 | 43.88d |
| 262 |  | Elaborar Manual de Usuario del Modulo | 1d? | 2015-09-14 | 2015-09-14 | 43.88d |
| 263 |  | Traspaso de Informacion | 1d? | 2015-09-14 | 2015-09-14 | 43.88d |
| 264 | 1.2.1.3.5.4 | **Aseguramiento de Calidad del Modulo Seguridad** | 1d? | 2015-09-14 | 2015-09-14 | 43.88d |
| 265 |  | Preparar las actividades de QA | 1d? | 2015-09-14 | 2015-09-14 | 43.88d |
| 266 |  | Ejecutar la Revisión de QA - Procesos | 1d? | 2015-09-14 | 2015-09-14 | 43.88d |
| 267 |  | Levantar la No Conformidad | 1d? | 2015-09-14 | 2015-09-14 | 43.88d |
| 268 |  | Elaborar el informe de Revision de QA para la Gerencia del Servicio | 1d? | 2015-09-14 | 2015-09-14 | 43.88d |
| 269 |  | Traspaso de Informacion | 1d? | 2015-09-14 | 2015-09-14 | 43.88d |
| 270 |  | Actualizar Matriz de Trazabilidad de Requerimientos | 1d | 2015-09-14 | 2015-09-14 | 43.88d |
| 271 |  | Traspaso de Informacion | 1d | 2015-09-14 | 2015-09-14 | 43.88d |
| 272 | 1.2.1.4 | **Pruebas** | 1d? | 2015-09-14 | 2015-09-14 | 43.88d |
| 273 | 1.2.1.4.1 | **Pruebas Unitarias** | 1d? | 2015-09-14 | 2015-09-14 | 43.88d |
| 274 | 1.2.1.4.1.1 | **Modulo de Instalacion de APK** | 1d? | 2015-09-14 | 2015-09-14 | 43.88d |
| 275 |  | Elaborar Pruebas de Modulo | 1d? | 2015-09-14 | 2015-09-14 | 43.88d |
| 276 |  | Elaborar Informe de Prueba | 1d? | 2015-09-14 | 2015-09-14 | 43.88d |
| 277 |  | Traspaso de Informacion | 1d? | 2015-09-14 | 2015-09-14 | 43.88d |
| 278 | 1.2.1.4.1.2 | **Modulo de Ingreso de Coordenadas y Destino** | 1d? | 2015-09-14 | 2015-09-14 | 43.88d |
| 279 |  | Elaborar Pruebas de Modulo | 1d? | 2015-09-14 | 2015-09-14 | 43.88d |
| 280 |  | Elaborar Informe de Prueba | 1d? | 2015-09-14 | 2015-09-14 | 43.88d |

| ID | WBS | Task | Duration | Start | Finish | Complete | Total float |
| --- | --- | --- | --- | --- | --- | --- | --- |
| 281 |  | Traspaso de Informacion | 1d? | 2015-09-14 | 2015-09-14 |  | 43.88d |
| 282 | 1.2.1.4.1.3 | **Modulo de Rutas** | 1d? | 2015-09-14 | 2015-09-14 |  | 43.88d |
| 283 |  | Elaborar Pruebas de Modulo | 1d? | 2015-09-14 | 2015-09-14 |  | 43.88d |
| 284 |  | Elaborar Informe de Prueba | 1d? | 2015-09-14 | 2015-09-14 |  | 43.88d |
| 285 |  | Traspaso de Informacion | 1d? | 2015-09-14 | 2015-09-14 |  | 43.88d |
| 286 | 1.2.1.4.1.4 | **Modulo de Seguridad** | 1d? | 2015-09-14 | 2015-09-14 |  | 43.88d |
| 287 |  | Elaborar Pruebas de Modulo | 1d? | 2015-09-14 | 2015-09-14 |  | 43.88d |
| 288 |  | Elaborar Informe de Prueba | 1d? | 2015-09-14 | 2015-09-14 |  | 43.88d |
| 289 |  | Traspaso de Informacion | 1d? | 2015-09-14 | 2015-09-14 |  | 43.88d |
| 290 | 1.2.1.4.2 | **Pruebas de QA para todos los Modulos** | 1d? | 2015-09-14 | 2015-09-14 |  | 43.88d |
| 291 | 1.2.1.4.2.1 | **Aseguramiento de la calidad** | 1d? | 2015-09-14 | 2015-09-14 |  | 43.88d |
| 292 |  | Preparar las actividades de QA. | 1d? | 2015-09-14 | 2015-09-14 |  | 43.88d |
| 293 |  | Ejecutar la Revisión de QA | 1d? | 2015-09-14 | 2015-09-14 |  | 43.88d |
| 294 |  | Ejecutar la Revisión de procesos | 1d? | 2015-09-14 | 2015-09-14 |  | 43.88d |
| 295 |  | Levantar la No Conformidad | 1d? | 2015-09-14 | 2015-09-14 |  | 43.88d |
| 296 |  | Realizar el seguimiento | 1d? | 2015-09-14 | 2015-09-14 |  | 43.88d |
| 297 |  | Elaborar e Informar las actividades de QA a la Gerencia del Servicio | 1d? | 2015-09-14 | 2015-09-14 |  | 43.88d |
| 298 |  | Traspaso de Informacion | 1d? | 2015-09-14 | 2015-09-14 |  | 43.88d |
| 299 | 1.2.1.4.3 | **Pruebas de Cliente** | 1d? | 2015-09-14 | 2015-09-14 |  | 43.88d |
| 300 | 1.2.1.4.3.1 | **Modulo de Instalacion de APK** | 1d? | 2015-09-14 | 2015-09-14 |  | 43.88d |
| 301 |  | Elaborar Pruebas de Modulo | 1d? | 2015-09-14 | 2015-09-14 |  | 43.88d |
| 302 |  | Elaborar Informe de Prueba | 1d? | 2015-09-14 | 2015-09-14 |  | 43.88d |
| 303 |  | Traspaso de Informacion | 1d? | 2015-09-14 | 2015-09-14 |  | 43.88d |
| 304 | 1.2.1.4.3.2 | **Modulo de Ingreso de Coordenadas y Destino** | 1d? | 2015-09-14 | 2015-09-14 |  | 43.88d |
| 305 |  | Elaborar Pruebas de Modulo | 1d? | 2015-09-14 | 2015-09-14 |  | 43.88d |
| 306 |  | Elaborar Informe de Prueba | 1d? | 2015-09-14 | 2015-09-14 |  | 43.88d |
| 307 |  | Traspaso de Informacion | 1d? | 2015-09-14 | 2015-09-14 |  | 43.88d |
| 308 | 1.2.1.4.3.3 | **Modulo de Rutas** | 1d? | 2015-09-14 | 2015-09-14 |  | 43.88d |
| 309 |  | Elaborar Pruebas de Modulo | 1d? | 2015-09-14 | 2015-09-14 |  | 43.88d |
| 310 |  | Elaborar Informe de Prueba | 1d? | 2015-09-14 | 2015-09-14 |  | 43.88d |
| 311 |  | Traspaso de Informacion | 1d? | 2015-09-14 | 2015-09-14 |  | 43.88d |
| 312 | 1.2.1.4.3.4 | **Modulo de Seguridad** | 1d? | 2015-09-14 | 2015-09-14 |  | 43.88d |
| 313 |  | Elaborar Pruebas de Modulo | 1d? | 2015-09-14 | 2015-09-14 |  | 43.88d |
| 314 |  | Elaborar Informe de Prueba | 1d? | 2015-09-14 | 2015-09-14 |  | 43.88d |
| 315 |  | Traspaso de Informacion | 1d? | 2015-09-14 | 2015-09-14 |  | 43.88d |
| 316 |  | Elaborar Matriz de Trazabilidad de Requerimientos Final | 1d | 2015-09-14 | 2015-09-14 |  | 43.88d |
| 317 |  | Traspaso de Informacion | 1d | 2015-09-14 | 2015-09-14 |  | 43.88d |
| 318 | 1.2.1.5 | **Implementacion** | 1d | 2015-09-14 | 2015-09-14 |  | 43.88d |
| 319 | 1.2.1.5.1 | **Guia de Usuario** | 1d | 2015-09-14 | 2015-09-14 |  | 43.88d |
| 320 |  | Elaborar Guia de Instalacion de APK | 1d | 2015-09-14 | 2015-09-14 |  | 43.88d |
| 321 |  | Elaborar Guia de Usuario con todos los modulos actualizados | 1d | 2015-09-14 | 2015-09-14 |  | 43.88d |
| 322 | 1.2.1.5.2 | **Preparacion de APK** | 1d | 2015-09-14 | 2015-09-14 |  | 43.88d |
| 323 |  | Creacion del archivo APK de instalacion | 1d | 2015-09-14 | 2015-09-14 |  | 43.88d |
| 324 |  | Publicacion de la Aplicación en Plataforma Google Play | 1d | 2015-09-14 | 2015-09-14 |  | 43.88d |
| 325 | 1.3 | **Reuniones Internas EJR-SOFT** | 54d | 2015-09-12 A | 2015-11-14 | 17% | 0d |
| 326 | 1.3.1 | **Reunion Quincenal 1** | 1d | 2015-09-12 A | 2015-09-12 A | 100% |  |
| 327 |  | Elaborar Acta de Reunion | 1d | 2015-09-12 A | 2015-09-12 A | 100% |  |
| 328 |  | Traspaso de Informacion | 1d | 2015-09-12 A | 2015-09-12 A | 100% |  |
| 329 | 1.3.2 | **Reunion Quincenal 2** | 1d | 2015-09-26 | 2015-09-26 |  |  |
| 330 |  | Elaborar Acta de Reunion | 1d | 2015-09-26 | 2015-09-26 |  | -0.12d |
| 331 |  | Traspaso de Informacion | 1d | 2015-09-26 | 2015-09-26 |  | -0.12d |
| 332 | 1.3.3 | **Reunion Quincenal 3** | 1d | 2015-10-10 | 2015-10-10 |  |  |
| 333 |  | Elaborar Acta de Reunion | 1d | 2015-10-10 | 2015-10-10 |  | -0.12d |
| 334 |  | Traspaso de Informacion | 1d | 2015-10-10 | 2015-10-10 |  | -0.12d |
| 335 | 1.3.4 | **Reunion Quincenal 4** | 1d | 2015-10-24 | 2015-10-24 |  |  |
| 336 |  | Elaborar Acta de Reunion | 1d | 2015-10-24 | 2015-10-24 |  | -0.12d |
| 337 |  | Traspaso de Informacion | 1d | 2015-10-24 | 2015-10-24 |  | -0.12d |
| 338 | 1.3.5 | **Reunion Quincenal 6** | 1d | 2015-11-07 | 2015-11-07 |  |  |
| 339 |  | Elaborar Acta de Reunion | 1d | 2015-11-07 | 2015-11-07 |  | -0.12d |
| 340 |  | Traspaso de Informacion | 1d | 2015-11-07 | 2015-11-07 |  | -0.12d |
| 341 | 1.3.6 | **Reunion Final** | 1d | 2015-11-14 | 2015-11-14 |  |  |
| 342 |  | Elaborar Acta de Reunion | 1d | 2015-11-14 | 2015-11-14 |  | -0.12d |
| 343 |  | Traspaso de Informacion | 1d | 2015-11-14 | 2015-11-14 |  | -0.12d |
| 344 | 1.4 | **Reuniones Externas EJR-SOFT - CLIENTE** | 48d | 2015-09-24 | 2015-11-19 |  |  |
| 345 | 1.4.1 | **1 Presentacion del Proyecto** | 1d | 2015-09-24 | 2015-09-24 |  |  |
| 346 |  | Revision de Entregables de Area de Proceso PP-PMC | 1d | 2015-09-24 | 2015-09-24 |  | -0.12d |
| 347 |  | Acta de Reunion con acuerdos tomados | 1d | 2015-09-24 | 2015-09-24 |  | -0.12d |
| 348 |  | Traspaso de Informacion | 1d | 2015-09-24 | 2015-09-24 |  | -0.12d |
| 349 | 1.4.2 | **2 Presentacion del Proyecto** | 1d | 2015-10-22 | 2015-10-22 |  |  |
| 350 |  | Kick Off Meeting con Profesor | 1d | 2015-10-22 | 2015-10-22 |  | -0.12d |

| ID | WBS | Task | Duration | Start | Finish | Total float |
| --- | --- | --- | --- | --- | --- | --- |
| 351 |  | Acta de Reunion con acuerdos tomados | 1d | 2015-10-22 | 2015-10-22 | -0.12d |
| 352 |  | Traspaso de Informacion | 1d | 2015-10-22 | 2015-10-22 | -0.12d |
| 353 | 1.4.3 | **3 Presentacion del Proyecto** | 1d | 2015-11-19 | 2015-11-19 |  |
| 354 |  | Kick Off Meeting con Profesor | 1d | 2015-11-19 | 2015-11-19 | -0.12d |
| 355 |  | Acta de Reunion con acuerdos tomados | 1d | 2015-11-19 | 2015-11-19 | -0.12d |
| 356 |  | Traspaso de Informacion | 1d | 2015-11-19 | 2015-11-19 | -0.12d |

## Version 2 (saved 2015-09-21)

Note of the change: Cronograma Actualizado

Last finish stays 2015-11-19.

Changed:

| ID | Task | Start | Finish | Duration | Complete | Total float | Predecessors | Other |
| --- | --- | --- | --- | --- | --- | --- | --- | --- |
| 1 | **Proyecto UTP-GPS-ALARM** |  |  | 68d → 68.12d | 26% → 21% | 0d → none |  |  |
| 4 | Revision de la Metodologia de Trabajo |  |  | 67.88d → 68d |  | 0.12d → 0d |  |  |
| 51 | **Asignacion,Ejecucion, Seguimiento y Control** |  |  | 61.88d → 62d |  | 0d → none |  | resources none → Edwar; Julio; Roger |
| 61 | **Desarrollo del Area de Proceso REQM** |  |  |  |  |  |  | resources none → Edwar; Julio; Roger |
| 68 | **Desarrollo del Area de Proceso PPQA** |  |  |  |  |  |  | resources none → Edwar; Julio |
| 75 | **Desarrollo del Area de Proceso MA** |  |  |  |  |  |  | resources none → Edwar; Julio; Roger |
| 82 | **Desarrollo del Area de Proceso GC** |  |  |  |  |  |  | resources none → Edwar |
| 88 | **Aseguramiento de Calidad MES 1** |  |  |  |  |  |  | resources none → Julio |
| 94 | **Aseguramiento de Calidad MES 2** |  |  |  |  |  |  | resources none → Julio |
| 100 | **Aseguramiento de Calidad MES 3** |  |  |  |  |  |  | resources none → Julio |
| 116 | **Proceso de Ingenieria** | 2015-09-14 A → 2015-09-11 A (-3d) | 2015-11-05 → 2015-11-18 (+13d) | 44.88d → 58d | 4% → 3% | 12.12d → none |  | resources none → Edwar; Julio; Roger |
| 117 | **Software UTP-GPS-ALARM** | 2015-09-14 A → 2015-09-14 | 2015-11-05 → 2015-11-18 (+13d) | 45d → 56d | 4% → 3% |  |  |  |
| 118 | **Analisis** |  |  | 17.88d → 18d |  |  |  |  |
| 170 | **Diseño** | 2015-09-14 → 2015-10-05 (+21d) | 2015-09-14 → 2015-10-15 (+31d) | 1d → 9d |  | 0d → none |  | resources none → Edwar; Julio; Roger |
| 171 | **Documento de Diseño** | 2015-09-14 → 2015-10-05 (+21d) | 2015-09-14 → 2015-10-07 (+23d) | 1d → 3d |  |  |  | resources none → Edwar; Julio; Roger |
| 172 | Analisis de la Informacion ,elaborar Documento de Diseño Tecnico | 2015-09-14 → 2015-10-05 (+21d) | 2015-09-14 → 2015-10-05 (+21d) |  |  | 0d → 38d |  | constraint none → start no earlier than 2015-10-05; resources none → Julio |
| 173 | Revision de Documento de Diseño Mejorado | 2015-09-14 → 2015-10-06 (+22d) | 2015-09-14 → 2015-10-06 (+22d) |  |  | 0d → none |  | resources none → Julio |
| 174 | Traspaso de Informacion | 2015-09-14 → 2015-10-06 (+22d) | 2015-09-14 → 2015-10-06 (+22d) |  |  | 0d → none |  | resources none → Edwar |
| 175 | **Aseguramiento de la calidad** | 2015-09-14 → 2015-10-08 (+24d) | 2015-09-14 → 2015-10-14 (+30d) | 1d → 6d |  |  |  | resources none → Edwar; Julio |
| 176 | Preparar las actividades de QA. | 2015-09-14 → 2015-10-08 (+24d) | 2015-09-14 → 2015-10-08 (+24d) | 1d? → 1d |  | 0d → none |  | constraint none → start no earlier than 2015-10-08; resources none → Julio |
| 177 | Ejecutar la Revisión de QA | 2015-09-14 → 2015-10-09 (+25d) | 2015-09-14 → 2015-10-09 (+25d) | 1d? → 1d |  | 0d → none | none → 176 | resources none → Julio |
| 178 | Ejecutar la Revisión de procesos | 2015-09-14 → 2015-10-10 (+26d) | 2015-09-14 → 2015-10-10 (+26d) | 1d? → 1d |  | 0d → none |  | constraint none → start no earlier than 2015-10-10; resources none → Julio |
| 179 | Levantar la No Conformidad | 2015-09-14 → 2015-10-10 (+26d) | 2015-09-14 → 2015-10-10 (+26d) | 1d? → 1d |  | 0d → 34d |  | constraint none → start no earlier than 2015-10-10; resources none → Julio |
| 180 | Realizar el seguimiento | 2015-09-14 → 2015-10-12 (+28d) | 2015-09-14 → 2015-10-14 (+30d) | 1d? → 2.88d |  | 0d → 31.12d |  | constraint none → finish no earlier than 2015-10-14; resources none → Julio |
| 181 | Elaborar el informe de Revision de QA para la Gerencia del Servicio | 2015-09-14 → 2015-10-12 (+28d) | 2015-09-14 → 2015-10-12 (+28d) | 1d? → 1d |  | 0d → 33d |  | constraint none → start no earlier than 2015-10-12; resources none → Julio |
| 182 | Traspaso de Informacion | 2015-09-14 → 2015-10-14 (+30d) | 2015-09-14 → 2015-10-14 (+30d) | 1d? → 1d |  | 0d → 31d |  | constraint none → start no earlier than 2015-10-14; resources none → Edwar |
| 183 | Actualizar Matriz de Trazabilidad de Requerimientos | 2015-09-14 → 2015-10-15 (+31d) | 2015-09-14 → 2015-10-15 (+31d) |  |  | 43.88d → 30d |  | constraint none → start no earlier than 2015-10-15 |
| 184 | Traspaso de Informacion | 2015-09-14 → 2015-10-15 (+31d) | 2015-09-14 → 2015-10-15 (+31d) | 1d → 0.88d |  | 43.88d → 30.12d |  | constraint none → finish no earlier than 2015-10-15; resources none → Edwar |
| 185 | **Inducción de personal** | 2015-09-14 → 2015-09-11 (-3d) | 2015-09-14 → 2015-10-15 (+31d) | 1d? → 29d |  | 43.88d → none |  | resources none → Edwar; Roger |
| 186 | Establecer personal para inducción | 2015-09-14 → 2015-09-11 (-3d) | 2015-09-14 → 2015-09-11 (-3d) | 1d? → 1d |  | 43.88d → 1.88d |  | constraint none → start no earlier than 2015-09-11; resources none → Roger |
| 187 | Realizar inducción al personal | 2015-09-14 → 2015-09-12 (-2d) | 2015-09-14 → 2015-10-12 (+28d) | 1d? → 25d |  | 43.88d → 1.88d | none → 186 | constraint none → finish no earlier than 2015-10-10; resources none → Roger |
| 188 | Verificar proceso de inducción | 2015-09-14 → 2015-10-14 (+30d) | 2015-09-14 → 2015-11-11 (+58d) | 1d? → 25d |  | 43.88d → 7d | none → 189 | constraint none → finish no earlier than 2015-10-12; resources none → Edwar; Roger |
| 189 | Elaborar Certificado de Induccion de Personal | 2015-09-14 → 2015-10-13 (+29d) | 2015-09-14 → 2015-10-13 (+29d) | 1d? → 1d |  | 43.88d → 1.88d | none → 187 | resources none → Edwar; Roger |
| 190 | Traspaso de Informacion | 2015-09-14 → 2015-10-14 (+30d) | 2015-09-14 → 2015-10-14 (+30d) | 1d? → 1d |  | 43.88d → 31d |  | constraint none → start no earlier than 2015-10-14; resources none → Edwar |
| 191 | Pasar a area de Desarrollo a Personal Capacitado | 2015-09-14 → 2015-10-15 (+31d) | 2015-09-14 → 2015-10-15 (+31d) | 1d? → 1d |  | 43.88d → 30d |  | constraint none → start no earlier than 2015-10-15; resources none → Roger |
| 192 | **Construccion** | 2015-09-14 → 2015-10-16 (+32d) | 2015-09-14 → 2015-11-09 (+56d) | 1d? → 21d |  | 43.88d → none |  | resources none → Edwar; Julio; Roger |
| 193 | **Modulo de Instalacion de APK** | 2015-09-14 → 2015-10-16 (+32d) | 2015-09-14 → 2015-10-19 (+35d) | 1d? → 2.88d |  | 43.88d → none |  | resources none → Edwar; Roger |
| 194 | **Construccion de Modulo** | 2015-09-14 → 2015-10-16 (+32d) | 2015-09-14 → 2015-10-17 (+33d) | 1d? → 2d |  | 43.88d → 0.88d |  | resources none → Edwar; Roger |
| 195 | Asignar permisos de usuario para la aplicación | 2015-09-14 → 2015-10-16 (+32d) | 2015-09-14 → 2015-10-16 (+32d) | 1d? → 1d |  | 43.88d → 1.88d |  | resources none → Edwar |
| 196 | Vincular usuario a cuenta | 2015-09-14 → 2015-10-16 (+32d) | 2015-09-14 → 2015-10-16 (+32d) | 1d? → 1d |  | 43.88d → 1.88d |  | resources none → Roger |
| 197 | Confirmacion y aceptar condiciones y terminos de uso | 2015-09-14 → 2015-10-17 (+33d) | 2015-09-14 → 2015-10-17 (+33d) | 1d? → 1d |  | 43.88d → 0.88d |  | constraint none → start no earlier than 2015-10-17; resources none → Edwar |
| 198 | Traspaso de Informacion | 2015-09-14 → 2015-10-17 (+33d) | 2015-09-14 → 2015-10-17 (+33d) | 1d? → 1d |  | 43.88d → 0.88d |  | constraint none → start no earlier than 2015-10-17; resources none → Edwar |
| 199 | **Pruebas de Modulo** | 2015-09-14 → 2015-10-17 (+33d) | 2015-09-14 → 2015-10-17 (+33d) | 1d? → 1d |  | 43.88d → none |  | resources none → Julio |
| 200 | Realizar Pruebas del Modulo | 2015-09-14 → 2015-10-17 (+33d) | 2015-09-14 → 2015-10-17 (+33d) |  |  | 43.88d → -0.12d |  | resources none → Julio |
| 201 | Elaborar Informe de Pruebas | 2015-09-14 → 2015-10-17 (+33d) | 2015-09-14 → 2015-10-17 (+33d) |  |  | 43.88d → -0.12d |  | resources none → Julio |
| 202 | Traspaso de Informacion | 2015-09-14 → 2015-10-17 (+33d) | 2015-09-14 → 2015-10-17 (+33d) |  |  | 43.88d → -0.12d |  | resources none → Edwar |
| 203 | **Guias de Modulo** | 2015-09-14 → 2015-10-19 (+35d) | 2015-09-14 → 2015-10-20 (+36d) | 1d? → 2d |  | 43.88d → none |  | resources none → Edwar; Roger |
| 204 | Elaborar Manual de Usuario del Modulo | 2015-09-14 → 2015-10-19 (+35d) | 2015-09-14 → 2015-10-20 (+36d) | 1d? → 2d |  | 43.88d → -0.12d |  | resources none → Roger |
| 205 | Traspaso de Informacion | 2015-09-14 → 2015-10-20 (+36d) | 2015-09-14 → 2015-10-20 (+36d) | 1d? → 1d |  | 43.88d → 26d |  | constraint none → start no earlier than 2015-10-20; resources none → Edwar |
| 206 | **Aseguramiento de Calidad del Modulo Instalacion APK** | 2015-09-14 → 2015-10-20 (+36d) | 2015-09-14 → 2015-10-21 (+37d) | 1d? → 2d |  | 43.88d → none |  | resources none → Julio |
| 207 | Preparar las actividades de QA | 2015-09-14 → 2015-10-20 (+36d) | 2015-09-14 → 2015-10-20 (+36d) | 1d? → 1d |  | 43.88d → 0.88d |  | resources none → Julio |
| 208 | Ejecutar la Revisión de QA - Procesos | 2015-09-14 → 2015-10-20 (+36d) | 2015-09-14 → 2015-10-20 (+36d) | 1d? → 1d |  | 43.88d → 0.88d |  | resources none → Julio |
| 209 | Levantar la No Conformidad | 2015-09-14 → 2015-10-21 (+37d) | 2015-09-14 → 2015-10-21 (+37d) | 1d? → 1d |  | 43.88d → 25d |  | constraint none → start no earlier than 2015-10-21; resources none → Julio |
| 210 | Elaborar el informe de Revision de QA para la Gerencia del Servicio | 2015-09-14 → 2015-10-21 (+37d) | 2015-09-14 → 2015-10-21 (+37d) | 1d? → 1d |  | 43.88d → 25d |  | constraint none → start no earlier than 2015-10-21; resources none → Julio |
| 211 | Traspaso de Informacion | 2015-09-14 → 2015-10-21 (+37d) | 2015-09-14 → 2015-10-21 (+37d) | 1d? → 1d |  | 43.88d → 25d |  | constraint none → start no earlier than 2015-10-21; resources none → Edwar |
| 212 | **Modulo de Ingreso de Coordenadas y Destino** | 2015-09-14 → 2015-10-20 (+36d) | 2015-09-14 → 2015-10-30 (+46d) | 1d? → 10d |  | 43.88d → none |  | resources none → Roger |
| 213 | **Construccion de Modulo** | 2015-09-14 → 2015-10-20 (+36d) | 2015-09-14 → 2015-10-24 (+40d) | 1d? → 4.88d |  | 43.88d → none |  | resources none → Roger |
| 214 | Ubicación Actual | 2015-09-14 → 2015-10-20 (+36d) | 2015-09-14 → 2015-10-20 (+36d) | 1d? → 1d |  | 43.88d → 3.88d |  | resources none → Roger |
| 215 | Asignar Destino | 2015-09-14 → 2015-10-21 (+37d) | 2015-09-14 → 2015-10-21 (+37d) | 1d? → 1d |  | 43.88d → 25d |  | constraint none → start no earlier than 2015-10-21; resources none → Roger |
| 216 | Cálculo de distancia hasta el destino | 2015-09-14 → 2015-10-22 (+38d) | 2015-09-14 → 2015-10-22 (+38d) | 1d? → 1d |  | 43.88d → 24d |  | constraint none → start no earlier than 2015-10-22; resources none → Roger |
| 217 | Establecer Rango de Alarma | 2015-09-14 → 2015-10-23 (+39d) | 2015-09-14 → 2015-10-23 (+39d) | 1d? → 1d |  | 43.88d → 23d |  | constraint none → start no earlier than 2015-10-23; resources none → Roger |
| 218 | Establecer tipo de Alarma ,volumen , vibrador | 2015-09-14 → 2015-10-24 (+40d) | 2015-09-14 → 2015-10-24 (+40d) | 1d? → 1d |  | 43.88d → 22d |  | constraint none → start no earlier than 2015-10-24; resources none → Roger |
| 219 | Traspaso de Informacion | 2015-09-14 → 2015-10-24 (+40d) | 2015-09-14 → 2015-10-24 (+40d) | 1d? → 1d |  | 43.88d → 22d |  | constraint none → start no earlier than 2015-10-24; resources none → Edwar |
| 220 | **Pruebas de Modulo** | 2015-09-14 → 2015-10-24 (+40d) | 2015-09-14 → 2015-10-27 (+43d) | 1d? → 3d |  | 43.88d → none |  | resources none → Julio |
| 221 | Realizar Pruebas del Modulo | 2015-09-14 → 2015-10-24 (+40d) | 2015-09-14 → 2015-10-24 (+40d) | 1d? → 1d |  | 43.88d → 1.88d |  | resources none → Julio |
| 222 | Elaborar Informe de Pruebas | 2015-09-14 → 2015-10-26 (+42d) | 2015-09-14 → 2015-10-26 (+42d) | 1d? → 1d |  | 43.88d → -0.12d |  | constraint none → start no earlier than 2015-10-25; resources none → Julio |
| 223 | Traspaso de Informacion | 2015-09-14 → 2015-10-27 (+43d) | 2015-09-14 → 2015-10-27 (+43d) | 1d? → 1d |  | 43.88d → -0.12d | none → 222 | resources none → Edwar |
| 224 | **Guias de Modulo** | 2015-09-14 → 2015-10-28 (+44d) | 2015-09-14 → 2015-10-29 (+45d) | 1d? → 2d |  | 43.88d → none |  | resources none → Roger |
| 225 | Elaborar Manual de Usuario del Modulo | 2015-09-14 → 2015-10-28 (+44d) | 2015-09-14 → 2015-10-29 (+45d) |  |  | 43.88d → 18.12d |  | constraint none → finish no earlier than 2015-10-29; resources none → Roger |
| 226 | Traspaso de Informacion | 2015-09-14 → 2015-10-29 (+45d) | 2015-09-14 → 2015-10-29 (+45d) |  |  | 43.88d → 18d |  | constraint none → start no earlier than 2015-10-29; resources none → Edwar |

| ID | Task | Start | Finish | Duration | Total float | Predecessors | Other |
| --- | --- | --- | --- | --- | --- | --- | --- |
| 227 | **Aseguramiento de Calidad del Modulo Ingreso Coordenadas y Destino** | 2015-09-14 → 2015-10-28 (+44d) | 2015-09-14 → 2015-10-30 (+46d) | 1d? → 3d | 43.88d → none |  | resources none → Julio |
| 228 | Preparar las actividades de QA | 2015-09-14 → 2015-10-28 (+44d) | 2015-09-14 → 2015-10-28 (+44d) | 1d? → 1d | 43.88d → 1.88d |  | resources none → Julio |
| 229 | Ejecutar la Revisión de QA - Procesos | 2015-09-14 → 2015-10-27 (+43d) | 2015-09-14 → 2015-10-29 (+45d) | 1d? → 2d | 43.88d → 18.12d |  | constraint none → finish no earlier than 2015-10-29; resources none → Julio |
| 230 | Levantar la No Conformidad | 2015-09-14 → 2015-10-28 (+44d) | 2015-09-14 → 2015-10-28 (+44d) | 1d? → 1d | 43.88d → 1.88d |  | resources none → Julio |
| 231 | Elaborar el informe de Revision de QA para la Gerencia del Servicio | 2015-09-14 → 2015-10-28 (+44d) | 2015-09-14 → 2015-10-28 (+44d) | 1d? → 1d | 43.88d → 1.88d |  | resources none → Julio |
| 232 | Traspaso de Informacion | 2015-09-14 → 2015-10-28 (+44d) | 2015-09-14 → 2015-10-28 (+44d) | 1d? → 1d | 43.88d → 1.88d |  | resources none → Edwar |
| 233 | **Modulo de Rutas** | 2015-09-14 → 2015-10-20 (+36d) | 2015-09-14 → 2015-10-29 (+45d) | 1d? → 9.12d | 43.88d → none |  | resources none → Edwar |
| 234 | **Construccion de Modulo** | 2015-09-14 → 2015-10-20 (+36d) | 2015-09-14 → 2015-10-22 (+38d) | 1d? → 3d | 43.88d → none |  | resources none → Edwar |
| 235 | Mostrar lista de ultimas rutas usadas | 2015-09-14 → 2015-10-20 (+36d) | 2015-09-14 → 2015-10-20 (+36d) | 1d? → 1d | 43.88d → 1.88d |  | resources none → Edwar |
| 236 | Guardar Historial de Rutas | 2015-09-14 → 2015-10-21 (+37d) | 2015-09-14 → 2015-10-21 (+37d) | 1d? → 1d | 43.88d → 25d |  | constraint none → start no earlier than 2015-10-21; resources none → Edwar |
| 237 | Guardar Rutas Favoritas | 2015-09-14 → 2015-10-22 (+38d) | 2015-09-14 → 2015-10-22 (+38d) | 1d? → 1d | 43.88d → 24d |  | constraint none → start no earlier than 2015-10-22; resources none → Edwar |
| 238 | Traspaso de Informacion | 2015-09-14 → 2015-10-22 (+38d) | 2015-09-14 → 2015-10-22 (+38d) | 1d? → 1d | 43.88d → 24d |  | constraint none → start no earlier than 2015-10-22; resources none → Edwar |
| 239 | **Pruebas de Modulo** | 2015-09-14 → 2015-10-23 (+39d) | 2015-09-14 → 2015-10-24 (+40d) | 1d? → 2d | 43.88d → none |  | resources none → Julio |
| 240 | Realizar Pruebas del Modulo | 2015-09-14 → 2015-10-23 (+39d) | 2015-09-14 → 2015-10-24 (+40d) | 1d? → 1d | 43.88d → 22.12d |  | constraint none → finish no earlier than 2015-10-24; resources none → Julio |
| 241 | Elaborar Informe de Pruebas | 2015-09-14 → 2015-10-24 (+40d) | 2015-09-14 → 2015-10-24 (+40d) | 1d? → 1d | 43.88d → 22d |  | constraint none → start no earlier than 2015-10-24; resources none → Julio |
| 242 | Traspaso de Informacion | 2015-09-14 → 2015-10-24 (+40d) | 2015-09-14 → 2015-10-24 (+40d) | 1d? → 1d | 43.88d → 22d |  | constraint none → start no earlier than 2015-10-24; resources none → Julio |
| 243 | **Guias de Modulo** | 2015-09-14 → 2015-10-26 (+42d) | 2015-09-14 → 2015-10-27 (+43d) | 1d? → 1.12d | 43.88d → none |  | resources none → Edwar |
| 244 | Elaborar Manual de Usuario del Modulo | 2015-09-14 → 2015-10-26 (+42d) | 2015-09-14 → 2015-10-27 (+43d) | 1d? → 1d | 43.88d → 20.12d |  | constraint none → finish no earlier than 2015-10-27; resources none → Edwar |
| 245 | Traspaso de Informacion | 2015-09-14 → 2015-10-27 (+43d) | 2015-09-14 → 2015-10-27 (+43d) | 1d? → 1d | 43.88d → 20d |  | constraint none → start no earlier than 2015-10-27; resources none → Edwar |
| 246 | **Aseguramiento de Calidad del Modulo Rutas** | 2015-09-14 → 2015-10-28 (+44d) | 2015-09-14 → 2015-10-29 (+45d) | 1d? → 2d | 43.88d → none |  | resources none → Julio |
| 247 | Preparar las actividades de QA | 2015-09-14 → 2015-10-28 (+44d) | 2015-09-14 → 2015-10-28 (+44d) | 1d? → 1d | 43.88d → 1d |  | resources none → Julio |
| 248 | Ejecutar la Revisión de QA - Procesos | 2015-09-14 → 2015-10-28 (+44d) | 2015-09-14 → 2015-10-29 (+45d) | 1d? → 1d | 43.88d → 18.12d |  | constraint none → finish no earlier than 2015-10-29; resources none → Julio |
| 249 | Levantar la No Conformidad | 2015-09-14 → 2015-10-29 (+45d) | 2015-09-14 → 2015-10-29 (+45d) | 1d? → 1d | 43.88d → 18d |  | constraint none → start no earlier than 2015-10-29; resources none → Julio |
| 250 | Elaborar el informe de Revision de QA para la Gerencia del Servicio | 2015-09-14 → 2015-10-29 (+45d) | 2015-09-14 → 2015-10-29 (+45d) | 1d? → 1d | 43.88d → 18d |  | constraint none → start no earlier than 2015-10-29; resources none → Julio |
| 251 | Traspaso de Informacion | 2015-09-14 → 2015-10-29 (+45d) | 2015-09-14 → 2015-10-29 (+45d) | 1d? → 1d | 43.88d → 18d |  | constraint none → start no earlier than 2015-10-29; resources none → Edwar |
| 252 | **Modulo de Seguridad** | 2015-09-14 → 2015-10-30 (+46d) | 2015-09-14 → 2015-11-07 (+54d) | 1d? → 8.12d | 43.88d → none |  | resources none → Edwar; Roger |
| 253 | **Construccion de Modulo** | 2015-09-14 → 2015-10-30 (+46d) | 2015-09-14 → 2015-11-02 (+49d) | 1d? → 3d | 43.88d → 5d |  | resources none → Roger |
| 254 | Iniciar la aplicación al iniciar el dispositivo siempre que el usuario lo desee. | 2015-09-14 → 2015-10-30 (+46d) | 2015-09-14 → 2015-10-30 (+46d) | 1d? → 1d | 43.88d → 5d |  | resources none → Roger |
| 255 | Comprobaciones de seguridad adicionales realizadas con el muestreo de licencia. | 2015-09-14 → 2015-10-31 (+47d) | 2015-09-14 → 2015-10-31 (+47d) | 1d? → 1d | 43.88d → 5d | none → 254 | resources none → Roger |
| 256 | Control de piratería de la aplicación | 2015-09-14 → 2015-11-02 (+49d) | 2015-09-14 → 2015-11-02 (+49d) | 1d? → 1d | 43.88d → 5d | none → 255 | resources none → Roger |
| 257 | **Pruebas de Modulo** | 2015-09-14 → 2015-11-02 (+49d) | 2015-09-14 → 2015-11-03 (+50d) | 1d? → 2.12d | 43.88d → none |  | resources none → Julio |
| 258 | Realizar Pruebas del Modulo | 2015-09-14 → 2015-11-02 (+49d) | 2015-09-14 → 2015-11-02 (+49d) | 1d? → 1d | 43.88d → 1d |  | resources none → Julio |
| 259 | Elaborar Informe de Pruebas | 2015-09-14 → 2015-11-03 (+50d) | 2015-09-14 → 2015-11-03 (+50d) | 1d? → 1d | 43.88d → 14d |  | constraint none → start no earlier than 2015-11-03; resources none → Julio |
| 260 | Traspaso de Informacion | 2015-09-14 → 2015-11-03 (+50d) | 2015-09-14 → 2015-11-03 (+50d) | 1d? → 1d | 43.88d → 14d |  | constraint none → start no earlier than 2015-11-03; resources none → Edwar |
| 261 | **Guias de Modulo** | 2015-09-14 → 2015-11-04 (+51d) | 2015-09-14 → 2015-11-04 (+51d) | 1d? → 1.12d | 43.88d → none |  | resources none → Roger |
| 262 | Elaborar Manual de Usuario del Modulo | 2015-09-14 → 2015-11-04 (+51d) | 2015-09-14 → 2015-11-04 (+51d) | 1d? → 1d | 43.88d → 0d |  | resources none → Roger |
| 263 | Traspaso de Informacion | 2015-09-14 → 2015-11-04 (+51d) | 2015-09-14 → 2015-11-04 (+51d) | 1d? → 1d | 43.88d → 13d |  | constraint none → start no earlier than 2015-11-04; resources none → Edwar |
| 264 | **Aseguramiento de Calidad del Modulo Seguridad** | 2015-09-14 → 2015-11-05 (+52d) | 2015-09-14 → 2015-11-07 (+54d) | 1d? → 3d | 43.88d → none |  | resources none → Julio |
| 265 | Preparar las actividades de QA | 2015-09-14 → 2015-11-05 (+52d) | 2015-09-14 → 2015-11-05 (+52d) | 1d? → 1d | 43.88d → 2d |  | resources none → Julio |
| 266 | Ejecutar la Revisión de QA - Procesos | 2015-09-14 → 2015-11-05 (+52d) | 2015-09-14 → 2015-11-07 (+54d) | 1d? → 2.88d | 43.88d → 10.12d |  | constraint none → finish no earlier than 2015-11-07; resources none → Julio |
| 267 | Levantar la No Conformidad | 2015-09-14 → 2015-11-07 (+54d) | 2015-09-14 → 2015-11-07 (+54d) | 1d? → 1d | 43.88d → 10d |  | constraint none → start no earlier than 2015-11-07; resources none → Julio |
| 268 | Elaborar el informe de Revision de QA para la Gerencia del Servicio | 2015-09-14 → 2015-11-07 (+54d) | 2015-09-14 → 2015-11-07 (+54d) | 1d? → 1d | 43.88d → 10d |  | constraint none → start no earlier than 2015-11-07; resources none → Julio |
| 269 | Traspaso de Informacion | 2015-09-14 → 2015-11-07 (+54d) | 2015-09-14 → 2015-11-07 (+54d) | 1d? → 1d | 43.88d → 10d |  | constraint none → start no earlier than 2015-11-07; resources none → Edwar |
| 270 | Actualizar Matriz de Trazabilidad de Requerimientos | 2015-09-14 → 2015-10-16 (+32d) | 2015-09-14 → 2015-11-09 (+56d) | 1d → 20.88d | 43.88d → 9.12d |  | constraint none → start no earlier than 2015-10-16; resources none → Julio |
| 271 | Traspaso de Informacion | 2015-09-14 → 2015-11-09 (+56d) | 2015-09-14 → 2015-11-09 (+56d) |  | 43.88d → 9d |  | constraint none → start no earlier than 2015-11-09; resources none → Edwar |
| 272 | **Pruebas** | 2015-09-14 → 2015-11-10 (+57d) | 2015-09-14 → 2015-11-18 (+65d) | 1d? → 8d | 43.88d → none |  | resources none → Julio |
| 273 | **Pruebas Unitarias** | 2015-09-14 → 2015-11-10 (+57d) | 2015-09-14 → 2015-11-13 (+60d) | 1d? → 4d | 43.88d → 2d |  | resources none → Julio |
| 274 | **Modulo de Instalacion de APK** | 2015-09-14 → 2015-11-10 (+57d) | 2015-09-14 → 2015-11-11 (+58d) | 1d? → 2d | 43.88d → 5.88d |  | resources none → Roger |
| 275 | Elaborar Pruebas de Modulo | 2015-09-14 → 2015-11-10 (+57d) | 2015-09-14 → 2015-11-11 (+58d) | 1d? → 2d | 43.88d → 5.88d |  | resources none → Roger |
| 276 | Elaborar Informe de Prueba | 2015-09-14 → 2015-11-11 (+58d) | 2015-09-14 → 2015-11-11 (+58d) | 1d? → 1d | 43.88d → 5.88d |  | constraint none → start no earlier than 2015-11-11; resources none → Roger |
| 277 | Traspaso de Informacion | 2015-09-14 → 2015-11-11 (+58d) | 2015-09-14 → 2015-11-11 (+58d) | 1d? → 1d | 43.88d → 5.88d |  | constraint none → start no earlier than 2015-11-11; resources none → Edwar |
| 278 | **Modulo de Ingreso de Coordenadas y Destino** | 2015-09-14 → 2015-11-12 (+59d) | 2015-09-14 → 2015-11-13 (+60d) | 1d? → 2.12d | 43.88d → none |  | resources none → Roger |
| 279 | Elaborar Pruebas de Modulo | 2015-09-14 → 2015-11-12 (+59d) | 2015-09-14 → 2015-11-13 (+60d) | 1d? → 2d | 43.88d → 0d |  | resources none → Roger |
| 280 | Elaborar Informe de Prueba | 2015-09-14 → 2015-11-13 (+60d) | 2015-09-14 → 2015-11-13 (+60d) | 1d? → 1d | 43.88d → 5d |  | constraint none → start no earlier than 2015-11-13; resources none → Roger |
| 281 | Traspaso de Informacion | 2015-09-14 → 2015-11-13 (+60d) | 2015-09-14 → 2015-11-13 (+60d) | 1d? → 1d | 43.88d → 5d |  | constraint none → start no earlier than 2015-11-13; resources none → Edwar |
| 282 | **Modulo de Rutas** | 2015-09-14 → 2015-11-12 (+59d) | 2015-09-14 → 2015-11-13 (+60d) | 1d? → 2.12d | 43.88d → none |  | resources none → Edwar |
| 283 | Elaborar Pruebas de Modulo | 2015-09-14 → 2015-11-12 (+59d) | 2015-09-14 → 2015-11-13 (+60d) | 1d? → 2d | 43.88d → 0d |  | resources none → Edwar |
| 284 | Elaborar Informe de Prueba | 2015-09-14 → 2015-11-13 (+60d) | 2015-09-14 → 2015-11-13 (+60d) | 1d? → 1d | 43.88d → 5d |  | constraint none → start no earlier than 2015-11-13; resources none → Edwar |
| 285 | Traspaso de Informacion | 2015-09-14 → 2015-11-13 (+60d) | 2015-09-14 → 2015-11-13 (+60d) | 1d? → 1d | 43.88d → 5d |  | constraint none → start no earlier than 2015-11-13; resources none → Edwar |
| 286 | **Modulo de Seguridad** | 2015-09-14 → 2015-11-12 (+59d) | 2015-09-14 → 2015-11-13 (+60d) | 1d? → 2.12d | 43.88d → none |  | resources none → Julio |
| 287 | Elaborar Pruebas de Modulo | 2015-09-14 → 2015-11-12 (+59d) | 2015-09-14 → 2015-11-13 (+60d) | 1d? → 2d | 43.88d → 0d |  | resources none → Edwar |
| 288 | Elaborar Informe de Prueba | 2015-09-14 → 2015-11-12 (+59d) | 2015-09-14 → 2015-11-12 (+59d) | 1d? → 1d | 43.88d → 1d |  | resources none → Edwar |
| 289 | Traspaso de Informacion | 2015-09-14 → 2015-11-12 (+59d) | 2015-09-14 → 2015-11-12 (+59d) | 1d? → 1d | 43.88d → 1d |  | resources none → Edwar |
| 290 | **Pruebas de QA para todos los Modulos** | 2015-09-14 → 2015-11-14 (+61d) | 2015-09-14 → 2015-11-14 (+61d) | 1d? → 1.12d | 43.88d → none |  | resources none → Julio |
| 291 | **Aseguramiento de la calidad** | 2015-09-14 → 2015-11-14 (+61d) | 2015-09-14 → 2015-11-14 (+61d) | 1d? → 1.12d | 43.88d → none |  | resources none → Julio |
| 292 | Preparar las actividades de QA. | 2015-09-14 → 2015-11-14 (+61d) | 2015-09-14 → 2015-11-14 (+61d) | 1d? → 1d | 43.88d → 0d |  | resources none → Julio |
| 293 | Ejecutar la Revisión de QA | 2015-09-14 → 2015-11-14 (+61d) | 2015-09-14 → 2015-11-14 (+61d) | 1d? → 1d | 43.88d → 0d |  | resources none → Julio |
| 294 | Ejecutar la Revisión de procesos | 2015-09-14 → 2015-11-14 (+61d) | 2015-09-14 → 2015-11-14 (+61d) | 1d? → 0.88d | 43.88d → 4.12d |  | constraint none → start no earlier than 2015-11-14; resources none → Julio |
| 295 | Levantar la No Conformidad | 2015-09-14 → 2015-11-14 (+61d) | 2015-09-14 → 2015-11-14 (+61d) | 1d? → 1d | 43.88d → 0d |  | resources none → Julio |
| 296 | Realizar el seguimiento | 2015-09-14 → 2015-11-14 (+61d) | 2015-09-14 → 2015-11-14 (+61d) | 1d? → 1d | 43.88d → 0d |  | resources none → Julio |

| ID | Task | Start | Finish | Duration | Total float | Other |
| --- | --- | --- | --- | --- | --- | --- |
| 297 | Elaborar e Informar las actividades de QA a la Gerencia del Servicio | 2015-09-14 → 2015-11-14 (+61d) | 2015-09-14 → 2015-11-14 (+61d) | 1d? → 1d | 43.88d → 4d | constraint none → start no earlier than 2015-11-14; resources none → Julio |
| 298 | Traspaso de Informacion | 2015-09-14 → 2015-11-14 (+61d) | 2015-09-14 → 2015-11-14 (+61d) | 1d? → 1d | 43.88d → 4d | constraint none → start no earlier than 2015-11-14; resources none → Edwar |
| 299 | **Pruebas de Cliente** | 2015-09-14 → 2015-11-16 (+63d) | 2015-09-14 → 2015-11-17 (+64d) | 1d? → 2d | 43.88d → none | resources none → Edwar; Julio; Roger |
| 300 | **Modulo de Instalacion de APK** | 2015-09-14 → 2015-11-16 (+63d) | 2015-09-14 → 2015-11-16 (+63d) | 1d? → 1d | 43.88d → 0.88d | resources none → Edwar; Julio; Roger |
| 301 | Elaborar Pruebas de Modulo | 2015-09-14 → 2015-11-16 (+63d) | 2015-09-14 → 2015-11-16 (+63d) | 1d? → 1d | 43.88d → 0.88d | resources none → Edwar; Julio; Roger |
| 302 | Elaborar Informe de Prueba | 2015-09-14 → 2015-11-16 (+63d) | 2015-09-14 → 2015-11-16 (+63d) | 1d? → 1d | 43.88d → 0.88d | resources none → Roger |
| 303 | Traspaso de Informacion | 2015-09-14 → 2015-11-16 (+63d) | 2015-09-14 → 2015-11-16 (+63d) | 1d? → 1d | 43.88d → 0.88d | resources none → Edwar |
| 304 | **Modulo de Ingreso de Coordenadas y Destino** | 2015-09-14 → 2015-11-16 (+63d) | 2015-09-14 → 2015-11-16 (+63d) | 1d? → 1d | 43.88d → 0.88d | resources none → Edwar; Julio; Roger |
| 305 | Elaborar Pruebas de Modulo | 2015-09-14 → 2015-11-16 (+63d) | 2015-09-14 → 2015-11-16 (+63d) | 1d? → 1d | 43.88d → 0.88d | resources none → Edwar; Julio; Roger |
| 306 | Elaborar Informe de Prueba | 2015-09-14 → 2015-11-16 (+63d) | 2015-09-14 → 2015-11-16 (+63d) | 1d? → 1d | 43.88d → 0.88d | resources none → Roger |
| 307 | Traspaso de Informacion | 2015-09-14 → 2015-11-16 (+63d) | 2015-09-14 → 2015-11-16 (+63d) | 1d? → 1d | 43.88d → 0.88d | resources none → Edwar |
| 308 | **Modulo de Rutas** | 2015-09-14 → 2015-11-16 (+63d) | 2015-09-14 → 2015-11-16 (+63d) | 1d? → 1d | 43.88d → 0.88d | resources none → Edwar; Julio; Roger |
| 309 | Elaborar Pruebas de Modulo | 2015-09-14 → 2015-11-16 (+63d) | 2015-09-14 → 2015-11-16 (+63d) | 1d? → 1d | 43.88d → 0.88d | resources none → Edwar; Julio; Roger |
| 310 | Elaborar Informe de Prueba | 2015-09-14 → 2015-11-16 (+63d) | 2015-09-14 → 2015-11-16 (+63d) | 1d? → 1d | 43.88d → 0.88d | resources none → Roger |
| 311 | Traspaso de Informacion | 2015-09-14 → 2015-11-16 (+63d) | 2015-09-14 → 2015-11-16 (+63d) | 1d? → 1d | 43.88d → 0.88d | resources none → Edwar |
| 312 | **Modulo de Seguridad** | 2015-09-14 → 2015-11-16 (+63d) | 2015-09-14 → 2015-11-16 (+63d) |  | 43.88d → 0.88d | resources none → Edwar; Julio; Roger |
| 313 | Elaborar Pruebas de Modulo | 2015-09-14 → 2015-11-16 (+63d) | 2015-09-14 → 2015-11-16 (+63d) |  | 43.88d → 0.88d | resources none → Edwar; Julio; Roger |
| 314 | Elaborar Informe de Prueba | 2015-09-14 → 2015-11-16 (+63d) | 2015-09-14 → 2015-11-16 (+63d) |  | 43.88d → 0.88d | resources none → Roger |
| 315 | Traspaso de Informacion | 2015-09-14 → 2015-11-16 (+63d) | 2015-09-14 → 2015-11-16 (+63d) |  | 43.88d → 0.88d | resources none → Edwar |
| 316 | Elaborar Matriz de Trazabilidad de Requerimientos Final | 2015-09-14 → 2015-11-17 (+64d) | 2015-09-14 → 2015-11-17 (+64d) |  | 43.88d → 2d | constraint none → start no earlier than 2015-11-17; resources none → Julio |
| 317 | Traspaso de Informacion | 2015-09-14 → 2015-11-17 (+64d) | 2015-09-14 → 2015-11-17 (+64d) |  | 43.88d → 2d | constraint none → start no earlier than 2015-11-17; resources none → Edwar |
| 318 | **Implementacion** | 2015-09-14 → 2015-11-17 (+64d) | 2015-09-14 → 2015-11-19 (+66d) | 1d → 3d | 43.88d → none | resources none → Edwar; Roger |
| 319 | **Guia de Usuario** | 2015-09-14 → 2015-11-17 (+64d) | 2015-09-14 → 2015-11-17 (+64d) |  | 43.88d → none | resources none → Edwar; Roger |
| 320 | Elaborar Guia de Instalacion de APK | 2015-09-14 → 2015-11-17 (+64d) | 2015-09-14 → 2015-11-17 (+64d) |  | 43.88d → 2d | constraint none → start no earlier than 2015-11-17; resources none → Edwar |
| 321 | Elaborar Guia de Usuario con todos los modulos actualizados | 2015-09-14 → 2015-11-17 (+64d) | 2015-09-14 → 2015-11-17 (+64d) |  | 43.88d → 2d | constraint none → start no earlier than 2015-11-17; resources none → Roger |
| 322 | **Preparacion de APK** | 2015-09-14 → 2015-11-18 (+65d) | 2015-09-14 → 2015-11-18 (+65d) |  | 43.88d → none | resources none → Edwar; Roger |
| 323 | Creacion del archivo APK de instalacion | 2015-09-14 → 2015-11-18 (+65d) | 2015-09-14 → 2015-11-18 (+65d) |  | 43.88d → 1d | constraint none → start no earlier than 2015-11-18; resources none → Edwar; Roger |
| 324 | Publicacion de la Aplicación en Plataforma Google Play | 2015-09-14 → 2015-11-18 (+65d) | 2015-09-14 → 2015-11-18 (+65d) |  | 43.88d → 1d | constraint none → start no earlier than 2015-11-18; resources none → Edwar; Roger |
| 325 | **Reuniones Internas EJR-SOFT** |  |  |  |  | resources none → Edwar; Julio; Roger |

## Version 3 (saved 2015-09-21)

Note of the change: Cronograma de Actividades

Last finish stays 2015-11-19. Complete tasks 42 → 44.

Added:

| ID | Task | Duration | Start | Finish | Predecessors | Resources |
| --- | --- | --- | --- | --- | --- | --- |
| 118 | **Requerimientos** | 4.12d | 2015-09-08 A | 2015-09-11 |  | Edwar; Julio; Roger |
| 119 | Desarrollar Propuesta de Solucion | 1d | 2015-09-08 A | 2015-09-08 A |  | Edwar; Julio; Roger |
| 120 | Desarrollar Plan de Proyecto Actualizado | 1d | 2015-09-09 A | 2015-09-09 | 119 | Edwar; Julio; Roger |
| 121 | Elaborar Matriz de Trazabilidad | 1d | 2015-09-10 A | 2015-09-10 | 120 | Julio |
| 122 | Traspaso de Informacion | 1d | 2015-09-11 A | 2015-09-11 A | 121 | Edwar |

Changed:

| ID | Task | Start | Finish | Duration | Complete | Other |
| --- | --- | --- | --- | --- | --- | --- |
| 1 | **Proyecto UTP-GPS-ALARM** |  |  |  | 21% → 22% |  |
| 2 | **Proceso de Gestion** |  |  |  | 46% → 47% |  |
| 5 | **Planificacion** |  |  |  | 80% → 83% |  |
| 6 | **Plan del Proyecto** |  |  |  | 91% → 95% |  |
| 7 | **Elaboracion de Plan de Proyecto** |  |  |  | 88% → 93% |  |
| 15 | Identificacion de Riesgos del Proyecto |  |  |  | 44% → 75% |  |
| 92 | Elaborar el informe de Revision de QA para la Gerencia del Servicio |  |  |  |  | was named Elaborar e Informar las actividades de QA a la Gerencia del Servicio |
| 93 | Traspaso de Informacion |  |  | 1d? → 1d |  |  |
| 116 | **Proceso de Ingenieria** | 2015-09-11 A → 2015-09-08 A (-3d) |  | 58d → 61d | 3% → 4% |  |
| 117 | **Software UTP-GPS-ALARM** | 2015-09-14 → 2015-09-08 A (-6d) |  | 56d → 61d | 3% → 4% |  |
| 277 | **Pruebas** |  | 2015-11-18 → 2015-11-17 (-1d) | 8d → 7d |  |  |
| 302 | Elaborar el informe de Revision de QA para la Gerencia del Servicio |  |  |  |  | was named Elaborar e Informar las actividades de QA a la Gerencia del Servicio |
| 323 | **Implementacion** |  | 2015-11-19 → 2015-11-18 (-1d) | 3d → 2d |  |  |

## Version 4 (saved 2015-09-21)

Note of the change: Cronograma de Proyecto

Last finish stays 2015-11-19. Complete tasks 44 → 59.

Changed:

| ID | Task | Start | Finish | Complete | Total float |
| --- | --- | --- | --- | --- | --- |
| 1 | **Proyecto UTP-GPS-ALARM** |  |  | 22% → 33% |  |
| 34 | **Revision por el Cliente (Profesor)** |  |  | 99% → 100% |  |
| 116 | **Proceso de Ingenieria** |  |  | 4% → 24% |  |
| 117 | **Software UTP-GPS-ALARM** |  |  | 4% → 24% |  |
| 118 | **Requerimientos** |  |  | 88% → 91% |  |
| 120 | Desarrollar Plan de Proyecto Actualizado |  |  | 75% → 90% |  |
| 123 | **Analisis** |  |  | 14% → 51% |  |
| 124 | Elaborar Documento con Diseño Actual | 2015-09-14 A | 2015-09-14 A | 0% → 100% | 16d → none |
| 125 | Elaborar Requerimientos para c/modulo | 2015-09-14 A |  | 0% → 75% |  |
| 126 | Revision de Documento de Diseño Actual | 2015-09-15 A | 2015-09-15 A | 0% → 100% | 16d → none |
| 127 | Traspaso de Informacion | 2015-09-15 A | 2015-09-15 A | 0% → 100% | 55d → none |
| 128 | **Casos de Uso** |  |  | 20% → 43% |  |
| 151 | **Caso de Uso Modulo 3** | 2015-09-19 A |  | 0% → 44% |  |
| 152 | Entender la problemática actual | 2015-09-19 A | 2015-09-19 A | 0% → 100% | 11.88d → none |
| 153 | Elaborar Casos de Uso | 2015-09-19 A | 2015-09-19 A | 0% → 100% | 9.88d → none |
| 154 | Actualizar Glosario de Terminos | 2015-09-21 A | 2015-09-21 A | 0% → 100% | 9.88d → none |
| 155 | Elaborar Caso de Uso Mejorado | 2015-09-22 A | 2015-09-22 A | 0% → 100% | 9.88d → none |
| 162 | **Caso de Uso Modulo 4** | 2015-09-21 A |  | 0% → 44% |  |
| 163 | Entender la problemática actual | 2015-09-21 A | 2015-09-21 A | 0% → 100% | 10.88d → none |
| 164 | Elaborar Casos de Uso | 2015-09-21 A | 2015-09-21 A | 0% → 100% | 10.88d → none |
| 165 | Actualizar Glosario de Terminos | 2015-09-21 A | 2015-09-21 A | 0% → 100% | 10.88d → none |
| 166 | Elaborar Caso de Uso Mejorado | 2015-09-21 A | 2015-09-21 A | 0% → 100% | 10.88d → none |
| 175 | **Diseño** | 2015-10-05 A |  | 0% → 22% |  |
| 176 | **Documento de Diseño** | 2015-10-05 A |  | 0% → 25% |  |
| 177 | Analisis de la Informacion ,elaborar Documento de Diseño Tecnico | 2015-10-05 A | 2015-10-05 A | 0% → 100% | 38d → none |
| 178 | Revision de Documento de Diseño Mejorado | 2015-10-06 A | 2015-10-06 A | 0% → 100% |  |
| 179 | Traspaso de Informacion | 2015-10-06 A | 2015-10-06 A | 0% → 100% |  |
| 190 | **Inducción de personal** | 2015-09-11 A |  | 0% → 48% |  |
| 191 | Establecer personal para inducción | 2015-09-11 A | 2015-09-11 A | 0% → 100% | 1.88d → none |
| 192 | Realizar inducción al personal | 2015-09-12 A |  | 0% → 50% |  |
| 193 | Verificar proceso de inducción | 2015-10-14 A |  | 0% → 50% |  |

## Version 5 (saved 2015-09-24)

Note of the change: Cronograma de Proyecto

Last finish stays 2015-11-19. Complete tasks 59 → 56.

Added:

| ID | Task | Duration | Start | Finish | Constraint |
| --- | --- | --- | --- | --- | --- |
| 64 | Revisar y Mejorar Matriz de Trazabilidad de Requerimientos | 1d? | 2015-09-29 | 2015-09-29 |  |
| 273 | **Seguridad** | 15d | 2015-10-20 | 2015-11-05 |  |
| 274 | Control de la Piratería de la Aplicación | 6d | 2015-10-20 | 2015-10-26 | start no earlier than 2015-10-20 |
| 275 | Ahorro de Energía | 3d | 2015-10-28 | 2015-10-30 | start no earlier than 2015-10-28 |
| 276 | Muestreo de Licencia | 5d | 2015-10-30 | 2015-11-05 | finish no earlier than 2015-11-05 |

Removed: 121 Elaborar Matriz de Trazabilidad; 195 Traspaso de Informacion; 261 Control de piratería de la aplicación

Changed:

| ID | Task | Start | Finish | Duration | Complete | Total float | Predecessors | Other |
| --- | --- | --- | --- | --- | --- | --- | --- | --- |
| 1 | **Proyecto UTP-GPS-ALARM** |  |  |  | 33% → 27% |  |  |  |
| 116 | **Proceso de Ingenieria** |  |  |  | 24% → 10% |  |  |  |
| 117 | **Software UTP-GPS-ALARM** |  |  |  | 24% → 10% |  |  |  |
| 118 | **Requerimientos** |  |  |  | 91% → 43% |  |  |  |
| 120 | Desarrollar Plan de Proyecto Actualizado |  |  |  |  | 0.75d → 2d | 119 → none |  |
| 121 | **Inducción de personal** | 2015-09-11 A → 2015-09-08 A (-3d) | 2015-10-15 → 2015-09-11 (-34d) | 29d → 4d | 48% → 5% |  |  |  |
| 122 | Establecer personal para inducción | 2015-09-11 A → 2015-09-08 A (-3d) | 2015-09-11 A → 2015-09-09 (-2d) |  | 100% → 0% | none → 60.12d |  | constraint start no earlier than 2015-09-11 → finish no earlier than 2015-09-08 |
| 123 | Realizar inducción al personal | 2015-09-12 A → 2015-09-09 A (-3d) | 2015-10-12 → 2015-09-11 (-31d) | 25d → 3d | 50% → 0% | 1.88d → 58d | 122 → none | constraint finish no earlier than 2015-10-10 → finish no earlier than 2015-09-11 |
| 124 | Verificar proceso de inducción | 2015-10-14 A → 2015-09-11 A (-33d) | 2015-11-11 → 2015-09-11 A (-61d) | 25d → 0.25d | 50% → 100% | 7d → none | 125 → none | constraint finish no earlier than 2015-10-12 → finish no earlier than 2015-09-11 |
| 125 | Elaborar Certificado de Induccion de Personal | 2015-10-13 → 2015-09-11 (-32d) | 2015-10-13 → 2015-09-11 (-32d) | 1d → 0.25d |  | 1.88d → 58.75d | 123 → none | constraint none → start no earlier than 2015-09-11 |
| 126 | Traspaso de Informacion | 2015-09-15 A → 2015-09-11 (-4d) | 2015-09-15 A → 2015-09-11 (-4d) | 1d → 0.25d | 100% → 0% | none → 58.75d |  | constraint start no earlier than 2015-09-15 → start no earlier than 2015-09-11 |
| 127 | Pasar a area de Desarrollo a Personal Capacitado | 2015-10-15 → 2015-09-11 (-34d) | 2015-10-15 → 2015-09-11 (-34d) | 1d → 0.25d |  | 30d → 58.75d |  | constraint start no earlier than 2015-10-15 → start no earlier than 2015-09-11 |
| 128 | Elaborar Matriz de Trazabilidad de Requerimientos | 2015-09-29 → 2015-09-10 A (-19d) | 2015-09-29 → 2015-09-10 (-19d) | 1d? → 1d | 0% → 75% | 8.88d → 1d |  | resources none → Julio |
| 129 | Traspaso de Informacion |  |  |  |  |  | Elaborar Matriz de Trazabilidad → none |  |
| 130 | **Analisis** |  |  |  | 51% → 22% |  |  |  |
| 131 | Revisión de Matriz de Trazabilidad de Requerimientos |  |  |  |  |  |  | was named Elaborar Documento con Diseño Actual |
| 132 | Elaborar Documento de Análisis |  | 2015-09-24 → 2015-10-01 (+7d) | 9.88d → 15.88d | 75% → 0% | 47.12d → 41.12d |  | was named Elaborar Requerimientos para c/modulo; constraint finish no earlier than 2015-09-24 → finish no earlier than 2015-10-01 |
| 133 | Elaborar Plan de Pruebas Preliminar |  |  |  |  |  | 131 → none | was named Revision de Documento de Diseño Actual |
| 134 | **Casos de Uso** |  | 2015-10-03 → 2015-09-28 (-5d) | 17.88d → 13d | 43% → 29% |  |  |  |
| 135 | **Caso de Uso Modulo 1** |  | 2015-10-03 → 2015-09-26 (-7d) | 17.88d → 11.88d | 38% → 25% |  |  |  |
| 137 | Elaborar Casos de Uso |  |  |  |  |  | 136 → none |  |
| 138 | Actualizar Glosario de Terminos |  |  |  |  |  | 137 → none |  |
| 139 | Elaborar Caso de Uso Mejorado |  |  |  |  |  | 138 → none |  |
| 140 | **Aseguramiento de Calidad del Caso de Uso Modulo 1** | 2015-09-29 → 2015-09-17 (-12d) | 2015-10-03 → 2015-09-26 (-7d) | 5d → 9d |  |  |  |  |
| 141 | Preparar las actividades de QA | 2015-09-29 → 2015-09-17 (-12d) | 2015-09-30 → 2015-09-17 (-13d) |  |  | 42.12d → 53d |  | constraint finish no earlier than 2015-09-30 → start no earlier than 2015-09-17 |
| 142 | Ejecutar la Revisión de QA - Procesos | 2015-09-29 → 2015-09-18 (-11d) | 2015-09-30 → 2015-09-18 (-12d) |  |  | 42.12d → 52d |  | constraint finish no earlier than 2015-09-30 → start no earlier than 2015-09-18 |
| 143 | Levantar la No Conformidad | 2015-09-30 → 2015-09-19 (-11d) | 2015-10-01 → 2015-09-19 (-12d) |  |  | 41.12d → 51d |  | constraint finish no earlier than 2015-10-01 → start no earlier than 2015-09-19 |
| 144 | Elaborar el informe de Revision de QA para la Gerencia del Servicio | 2015-09-29 → 2015-09-21 (-8d) | 2015-09-29 → 2015-09-25 (-4d) | 1d → 5d |  | 3.88d → 46d |  | constraint none → start no earlier than 2015-09-21 |
| 145 | Traspaso de Informacion | 2015-09-29 → 2015-09-26 (-3d) | 2015-09-29 → 2015-09-26 (-3d) |  |  | 3.88d → 45d |  | constraint none → start no earlier than 2015-09-26 |
| 146 | **Caso de Uso Modulo 2** |  | 2015-10-03 → 2015-09-26 (-7d) | 15d → 9d | 44% → 33% |  |  |  |
| 148 | Elaborar Casos de Uso |  |  |  |  |  | 147 → none |  |
| 149 | Actualizar Glosario de Terminos |  | 2015-09-19 A → 2015-09-19 |  | 100% → 50% | none → 5.88d | 150 → none |  |
| 150 | Elaborar Caso de Uso Mejorado | 2015-09-19 A → 2015-09-21 A (+2d) | 2015-09-19 A → 2015-09-21 (+2d) |  | 100% → 50% | none → 4.88d | 148 → none |  |
| 151 | **Aseguramiento de Calidad del Caso de Uso Modulo 2** | 2015-09-29 → 2015-09-22 (-7d) | 2015-10-03 → 2015-09-26 (-7d) |  |  |  |  |  |
| 152 | Preparar las actividades de QA | 2015-09-29 → 2015-09-22 (-7d) | 2015-09-29 → 2015-09-22 (-7d) |  |  | 3.88d → 49d |  | constraint none → start no earlier than 2015-09-22 |
| 153 | Ejecutar la Revisión de QA - Procesos | 2015-09-29 → 2015-09-23 (-6d) | 2015-09-29 → 2015-09-23 (-6d) |  |  | 3.88d → 48d |  | constraint none → start no earlier than 2015-09-23 |
| 154 | Levantar la No Conformidad | 2015-09-29 → 2015-09-24 (-5d) | 2015-09-29 → 2015-09-25 (-4d) | 1d → 2d |  | 3.88d → 46d |  | constraint none → start no earlier than 2015-09-24 |
| 155 | Elaborar el informe de Revision de QA para la Gerencia del Servicio | 2015-09-29 → 2015-09-26 (-3d) | 2015-09-29 → 2015-09-26 (-3d) | 1d → 0.5d |  | 3.88d → 45.5d |  | constraint none → start no earlier than 2015-09-26 |
| 156 | Traspaso de Informacion | 2015-09-29 → 2015-09-26 (-3d) | 2015-09-29 → 2015-09-26 (-3d) | 1d → 0.5d |  | 3.88d → 45.5d |  | constraint none → start no earlier than 2015-09-26 |
| 157 | **Caso de Uso Modulo 3** |  | 2015-10-03 → 2015-09-26 (-7d) | 13d → 7d | 44% → 43% |  |  |  |
| 158 | Entender la problemática actual |  |  | 1d → 0.5d |  |  |  |  |
| 159 | Elaborar Casos de Uso |  |  | 1d → 0.5d |  |  |  |  |
| 160 | Actualizar Glosario de Terminos |  |  |  |  |  | 159 → none |  |
| 161 | Elaborar Caso de Uso Mejorado |  |  |  |  |  | 160 → none |  |
| 162 | **Aseguramiento de Calidad del Caso de Uso Modulo 3** | 2015-09-29 → 2015-09-23 (-6d) | 2015-10-03 → 2015-09-26 (-7d) | 5d → 4d |  |  |  |  |
| 163 | Preparar las actividades de QA | 2015-09-29 → 2015-09-23 (-6d) | 2015-09-29 → 2015-09-23 (-6d) | 1d? → 1d |  | 3.88d → 2.88d |  |  |
| 164 | Ejecutar la Revisión de QA - Procesos | 2015-09-29 → 2015-09-24 (-5d) | 2015-09-29 → 2015-09-24 (-5d) | 1d? → 1d |  | 3.88d → 47d |  | constraint none → start no earlier than 2015-09-24 |
| 165 | Levantar la No Conformidad | 2015-09-29 → 2015-09-25 (-4d) | 2015-09-29 → 2015-09-25 (-4d) | 1d? → 1d |  | 3.88d → 46d |  | constraint none → start no earlier than 2015-09-25 |
| 166 | Elaborar el informe de Revision de QA para la Gerencia del Servicio | 2015-09-29 → 2015-09-26 (-3d) | 2015-09-29 → 2015-09-26 (-3d) | 1d? → 0.5d |  | 3.88d → 45.5d |  | constraint none → start no earlier than 2015-09-26 |
| 167 | Traspaso de Informacion | 2015-09-29 → 2015-09-26 (-3d) | 2015-09-29 → 2015-09-26 (-3d) | 1d? → 0.5d |  | 3.88d → 45.5d |  | constraint none → start no earlier than 2015-09-26 |
| 168 | **Caso de Uso Modulo 4** |  | 2015-10-03 → 2015-09-26 (-7d) | 12d → 6d | 44% → 17% |  |  |  |
| 169 | Entender la problemática actual |  |  | 1d? → 0.25d |  |  |  |  |
| 170 | Elaborar Casos de Uso |  |  | 1d? → 0.25d |  |  |  |  |
| 171 | Actualizar Glosario de Terminos |  |  | 1d? → 0.25d |  |  |  |  |
| 172 | Elaborar Caso de Uso Mejorado |  |  | 1d? → 0.25d |  |  |  |  |
| 173 | **Aseguramiento de Calidad del Caso de Uso Modulo 4** | 2015-09-29 → 2015-09-22 (-7d) | 2015-10-03 → 2015-09-26 (-7d) |  |  |  |  |  |
| 174 | Preparar las actividades de QA | 2015-09-29 → 2015-09-22 (-7d) | 2015-09-29 → 2015-09-22 (-7d) | 1d? → 1d |  | 3.88d → 48d |  | constraint none → start no earlier than 2015-09-22 |
| 175 | Ejecutar la Revisión de QA - Procesos | 2015-09-29 → 2015-09-23 (-6d) | 2015-09-29 → 2015-09-23 (-6d) | 1d? → 1d |  | 3.88d → 48d | none → 174 | constraint none → start no earlier than 2015-09-23 |
| 176 | Levantar la No Conformidad | 2015-09-29 → 2015-09-22 (-7d) | 2015-09-29 → 2015-09-22 (-7d) | 1d? → 1d |  |  |  |  |
| 177 | Elaborar el informe de Revision de QA para la Gerencia del Servicio | 2015-09-29 → 2015-09-25 (-4d) | 2015-09-29 → 2015-09-26 (-3d) | 1d? → 1.5d |  | 3.88d → 45.12d |  | constraint none → finish no earlier than 2015-09-26 |
| 178 | Traspaso de Informacion | 2015-09-29 → 2015-09-26 (-3d) | 2015-09-29 → 2015-09-26 (-3d) | 1d? → 0.5d |  | 3.88d → 45.12d |  | constraint none → finish no earlier than 2015-09-26 |
| 179 | Actualizar Matriz de Trazabilidad de Requerimientos | 2015-09-14 → 2015-10-02 (+18d) | 2015-09-14 → 2015-10-02 (+18d) | 1d? → 1d |  | 17d → 40d |  | constraint none → start no earlier than 2015-10-02; resources none → Julio |
| 180 | Traspaso de Informacion | 2015-09-14 → 2015-10-03 (+19d) | 2015-09-14 → 2015-10-03 (+19d) | 1d? → 1d |  | 17d → 39d |  | constraint none → start no earlier than 2015-10-03 |
| 197 | **Modulo Mapa GPS** |  |  |  |  |  |  | was named Modulo de Instalacion de APK |
| 199 | Enlace del Módulo con el servicio de Google Maps |  |  |  |  |  |  | was named Asignar permisos de usuario para la aplicación |
| 200 | Centrado de Mapa en Posicion Actual |  |  |  |  |  |  | was named Vincular usuario a cuenta |
| 201 | Vista por Satélite del mapa e Información de Tráfico |  |  |  |  |  |  | was named Confirmacion y aceptar condiciones y terminos de uso |
| 205 | Elaborar Informe de Pruebas (Preliminar) |  |  |  |  |  |  | was named Elaborar Informe de Pruebas |
| 216 | **Modulo Configuración Alarma** |  |  |  |  |  |  | was named Modulo de Ingreso de Coordenadas y Destino |
| 218 | Rango de Alarma en el Mapa |  |  |  |  |  |  | was named Ubicación Actual |

| ID | Task | Start | Finish | Duration | Total float | Other |
| --- | --- | --- | --- | --- | --- | --- |
| 219 | Soporte de Archivos MP3 para las Alarmas |  |  |  |  | was named Asignar Destino |
| 220 | Activar funcion de Vibración del Teléfono para Alarmas |  |  |  |  | was named Cálculo de distancia hasta el destino |
| 221 | Establecer control de Volumen |  |  |  |  | was named Establecer Rango de Alarma |
| 222 | Establecer tipo de Alarma |  |  |  |  | was named Establecer tipo de Alarma ,volumen , vibrador |
| 226 | Elaborar Informe de Pruebas (Preliminar) |  |  |  |  | was named Elaborar Informe de Pruebas |
| 237 | **Modulo de Ajustes de la Configuración** |  |  |  |  | was named Modulo de Rutas |
| 239 | Acceso a Panel de Configuración |  |  |  |  | was named Mostrar lista de ultimas rutas usadas |
| 240 | Soporte de Idiomas Inglés y Español |  |  |  |  | was named Guardar Historial de Rutas |
| 241 | Migración de Datos de Rutas Personalizadas |  |  |  |  | was named Guardar Rutas Favoritas |
| 245 | Elaborar Informe de Pruebas (Premilinar) |  |  |  |  | was named Elaborar Informe de Pruebas |
| 256 | **Modulo Lista de Alarmas** |  |  |  |  | was named Modulo de Seguridad |
| 257 | **Construccion de Modulo** |  | 2015-11-02 → 2015-10-31 (-2d) | 3d → 2d | 5d → 6d |  |
| 258 | Administración de Múltiples registros de Alarmas |  |  |  | 5d → 6d | was named Iniciar la aplicación al iniciar el dispositivo siempre que el usuario lo desee. |
| 259 | Historial de Alarmas |  |  |  | 5d → 6d | was named Comprobaciones de seguridad adicionales realizadas con el muestreo de licencia. |
| 262 | Elaborar Informe de Pruebas (Preliminar) |  |  |  |  | was named Elaborar Informe de Pruebas |
| 277 | Actualizar Matriz de Trazabilidad de Requerimientos | 2015-10-16 → 2015-11-07 (+22d) |  | 20.88d → 2d | 9.12d → 9d | constraint start no earlier than 2015-10-16 → start no earlier than 2015-11-07 |
| 281 | **Modulo Mapa GPS** |  |  |  |  | was named Modulo de Instalacion de APK |
| 285 | **Modulo Configuración Alarma** |  |  |  |  | was named Modulo de Ingreso de Coordenadas y Destino |
| 289 | **Modulo de Ajustes de la Configuración** |  |  |  |  | was named Modulo de Rutas |
| 293 | **Modulo Lista de Alarmas** |  |  |  |  | was named Modulo de Seguridad |
| 307 | **Modulo Mapa GPS** |  |  |  |  | was named Modulo de Instalacion de APK |
| 311 | **Modulo Configuración Alarma** |  |  |  |  | was named Modulo de Ingreso de Coordenadas y Destino |
| 315 | **Modulo de Ajustes de la Configuración** |  |  |  |  | was named Modulo de Rutas |
| 319 | **Modulo Lista de Alarmas** |  |  |  |  | was named Modulo de Seguridad |
| 328 | Elaborar Manual de Usuario con todos los modulos actualizados |  |  |  |  | was named Elaborar Guia de Usuario con todos los modulos actualizados |

## Version 6 (saved 2015-10-13)

Note of the change: Cronograma de Proyecto

Last finish stays 2015-11-19.

Changed:

| ID | Task | Other |
| --- | --- | --- |
| 16 | Elaborar Documento Registro de Riesgos del Proyecto | was named Elaborar Documento de Riesgos del Proyecto |
